# C:\Documents and Settings\Edmond\My Documents\caAERS-ProjectSchedule-ConstructionPhase

Schedule from MS Project, 2006-12-01 to 2007-10-31, A marks actual dates.

## Calendars

- Standard: Mon-Fri 08:00-12:00, 13:00-17:00; Sat-Sun off. Exceptions (off unless hours are given): 2006-12-25, 2007-01-01.

## Resources

| Resource |
| --- |
| Warren |
| Cal |
| Renee |
| Rhett |
| Vinay |
| Joshua |
| Padmaja |
| Richard |
| Krikor |
| John |
| Ram |
| Sujith |
| David |
| Brenda |
| Natasha |
| Mayo |
| WF |
| AE_SIG |
| VCDE_WS |
| Arch_WS |
| Edmond |
| Functional Team Lead |
| Dave |
| CCB |
| Sean |
| BAH |
| Kulasekeran |
| Kulasekaran |

## Schedule

| ID | WBS | Task | Type | Duration | Start | Finish | Predecessors | Complete | Remaining | Baseline start | Baseline finish | Baseline duration | Total slack | Constraint | Resources | Work | Actual work | Text1 |
| --- | --- | --- | --- | --- | --- | --- | --- | --- | --- | --- | --- | --- | --- | --- | --- | --- | --- | --- |
| 1 | 1 | **caAERS Application Development Project** |  | 237d? | 2006-12-01 A | 2007-10-31 |  | 35% | 154.34d? | 2006-12-01 | 2007-09-26 | 212d | 0d |  |  | 26944.2h | 13646.1h |  |
| 2 | 1.1 | **Elaboration Phase** |  | 57d | 2006-12-01 A | 2007-02-21 |  | 89% | 6.34d | 2006-12-01 | 2007-02-01 | 43d | 180d |  |  | 13192.2h | 11538.1h |  |
| 3 | 1.1.1 | **Iteration 1** |  | 31d | 2006-12-01 A | 2007-01-16 |  | 87% | 3.95d | 2006-12-01 | 2007-01-03 | 22d | 206d |  |  | 8120.24h | 7022.06h |  |
| 4 | 1.1.1.1 | **Project Management** |  | 31d | 2006-12-01 A | 2007-01-16 |  | 75% | 7.82d | 2006-12-01 | 2007-01-03 | 22d | 206d |  |  | 2736h | 2512h |  |
| 5 | 1.1.1.1.1 | **Inception and Kickoff Planning** |  | 6d | 2006-12-01 A | 2006-12-08 A |  | 100% |  | 2006-12-01 | 2006-12-08 | 6d |  |  |  | 200h | 200h |  |
| 6 | 1.1.1.1.1.1 | Draft Project Management Plan |  | 3d | 2006-12-01 A | 2006-12-05 A |  | 100% |  | 2006-12-01 | 2006-12-05 | 3d |  |  | Edmond; Ram; Vinay | 72h | 72h |  |
| 7 | 1.1.1.1.1.2 | High-Level Schedule and Assignments |  | 3d | 2006-12-01 A | 2006-12-05 A |  | 100% |  | 2006-12-01 | 2006-12-05 | 3d |  |  | Edmond; Ram; Vinay | 72h | 72h | GANTT |
| 8 | 1.1.1.1.1.3 | Kickoff Meeting | milestone | 1d | 2006-12-06 A | 2006-12-06 A |  | 100% |  | 2006-12-06 | 2006-12-06 | 1d |  | start no earlier than 2006-12-06 | Edmond; Ram; Vinay; Warren; Renee; Cal | 48h | 48h |  |
| 9 | 1.1.1.1.1.4 | Kickoff Meeting Notes (Task 1.5) |  | 1d | 2006-12-08 A | 2006-12-08 A | 8FS+1d | 100% |  | 2006-12-08 | 2006-12-08 | 1d |  |  | Edmond | 8h | 8h | Kickoff Minutes |
| 10 | 1.1.1.1.2 | **Project Management Plan Baseline (Task 1.1)** |  | 25d | 2006-12-11 A | 2007-01-16 |  | 44% | 14d | 2006-12-11 | 2006-12-26 | 11d | 206d |  |  | 408h | 296h |  |
| 11 | 1.1.1.1.2.1 | Add Details for Elaboration Phase to Project Plan |  | 3d | 2006-12-11 A | 2006-12-13 A | 9 | 100% |  | 2006-12-11 | 2006-12-13 | 3d |  |  | Edmond; Ram; Vinay | 72h | 72h |  |
| 12 | 1.1.1.1.2.2 | Resource Load and Level Project Schedule for Elaboration Phase |  | 1d | 2006-12-14 A | 2006-12-14 A | 11 | 100% |  | 2006-12-14 | 2006-12-14 | 1d |  |  | Edmond | 8h | 8h |  |
| 13 | 1.1.1.1.2.3 | Adopters/Collaborators Review |  | 5d | 2006-12-15 A | 2006-12-21 A | 12 | 100% |  | 2006-12-15 | 2006-12-21 | 5d |  |  | Mayo; WF; AE_SIG; VCDE_WS; Arch_WS | 200h | 200h |  |
| 14 | 1.1.1.1.2.4 | Updates |  | 2d | 2006-12-22 A | 2006-12-26 A | 13 | 100% |  | 2006-12-22 | 2006-12-26 | 2d |  |  | Edmond | 16h | 16h |  |
| 15 | 1.1.1.1.2.5 | Submit to BAH | milestone | 0d | 2006-12-26 A | 2006-12-26 A | 14 | 100% |  | 2006-12-26 | 2006-12-26 | 0d |  |  | Edmond |  |  |  |
| 16 | 1.1.1.1.2.6 | Formal Review by BAH |  | 14d | 2006-12-27 | 2007-01-16 | 15 |  |  |  |  |  | 181d |  | BAH | 112h |  |  |
| 17 | 1.1.1.1.3 | **Communications Plan (Task 1.2)** |  | 25d | 2006-12-01 A | 2007-01-08 |  | 44% | 14d | 2006-12-01 | 2006-12-15 | 11d | 212d |  |  | 480h | 368h |  |
| 18 | 1.1.1.1.3.1 | Developers Draft |  | 5d | 2006-12-01 A | 2006-12-07 A |  | 100% |  | 2006-12-01 | 2006-12-07 | 5d |  |  | Edmond; Ram; Warren; Cal | 160h | 160h |  |
| 19 | 1.1.1.1.3.2 | Adopters/Collaborators Review |  | 5d | 2006-12-08 A | 2006-12-14 A | 18 | 100% |  | 2006-12-08 | 2006-12-14 | 5d |  |  | Mayo; WF; AE_SIG; VCDE_WS; Arch_WS | 200h | 200h |  |
| 20 | 1.1.1.1.3.3 | Developers Update |  | 1d | 2006-12-15 A | 2006-12-15 A | 19 | 100% |  | 2006-12-15 | 2006-12-15 | 1d |  |  | Edmond | 8h | 8h | Communications Plan |
| 21 | 1.1.1.1.3.4 | Submit to BAH | milestone | 0d | 2006-12-15 A | 2006-12-15 A | 20 | 100% |  | 2006-12-15 | 2006-12-15 | 0d |  |  | Edmond |  |  |  |
| 22 | 1.1.1.1.3.5 | Formal Review by BAH |  | 14d | 2006-12-18 | 2007-01-08 | 21 |  |  |  |  |  | 187d |  | BAH | 112h |  |  |
| 23 | 1.1.1.1.4 | **Adopters Collaboration Plan** |  | 11d | 2006-12-01 A | 2006-12-15 A |  | 100% |  | 2006-12-01 | 2006-12-15 | 11d |  |  |  | 368h | 368h | Collaboration Plan |
| 24 | 1.1.1.1.4.1 | Developers Draft |  | 5d | 2006-12-01 A | 2006-12-07 A |  | 100% |  | 2006-12-01 | 2006-12-07 | 5d |  |  | Edmond; Ram; Warren; Cal | 160h | 160h |  |
| 25 | 1.1.1.1.4.2 | Adopters/Collaborators Review |  | 5d | 2006-12-08 A | 2006-12-14 A | 24 | 100% |  | 2006-12-08 | 2006-12-14 | 5d |  |  | Mayo; WF; AE_SIG; VCDE_WS; Arch_WS | 200h | 200h |  |
| 26 | 1.1.1.1.4.3 | Developers Update |  | 1d | 2006-12-15 A | 2006-12-15 A | 25 | 100% |  | 2006-12-15 | 2006-12-15 | 1d |  |  | Edmond | 8h | 8h |  |
| 27 | 1.1.1.1.4.4 | Submit to BAH | milestone | 0d | 2006-12-15 A | 2006-12-15 A | 26 | 100% |  | 2006-12-15 | 2006-12-15 | 0d |  |  | Edmond |  |  |  |

| ID | WBS | Task | Type | Duration | Start | Finish | Predecessors | Complete | Baseline start | Baseline finish | Baseline duration | Constraint | Resources | Work | Actual work | Text1 |
| --- | --- | --- | --- | --- | --- | --- | --- | --- | --- | --- | --- | --- | --- | --- | --- | --- |
| 28 | 1.1.1.1.5 | **Risk and Issue Management Plan** |  | 11d | 2006-12-01 A | 2006-12-15 A |  | 100% | 2006-12-01 | 2006-12-15 | 11d |  |  | 248h | 248h | Risk Matrix |
| 29 | 1.1.1.1.5.1 | Developers Draft |  | 5d | 2006-12-01 A | 2006-12-07 A |  | 100% | 2006-12-01 | 2006-12-07 | 5d |  | Edmond | 40h | 40h |  |
| 30 | 1.1.1.1.5.2 | Adopters/Collaborators Review |  | 5d | 2006-12-08 A | 2006-12-14 A | 29 | 100% | 2006-12-08 | 2006-12-14 | 5d |  | Mayo; WF; AE_SIG; VCDE_WS; Arch_WS | 200h | 200h |  |
| 31 | 1.1.1.1.5.3 | Developers Update |  | 1d | 2006-12-15 A | 2006-12-15 A | 30 | 100% | 2006-12-15 | 2006-12-15 | 1d |  | Edmond | 8h | 8h |  |
| 32 | 1.1.1.1.5.4 | Submit to BAH | milestone | 0d | 2006-12-15 A | 2006-12-15 A | 31 | 100% | 2006-12-15 | 2006-12-15 | 0d |  | Edmond |  |  |  |
| 33 | 1.1.1.1.6 | **caAERS Vision and Scope Document (Task 1.8)** |  | 11d | 2006-12-06 A | 2006-12-20 A |  | 100% | 2006-12-06 | 2006-12-20 | 11d |  |  | 400h | 400h | Scope Document |
| 34 | 1.1.1.1.6.1 | Developers Draft |  | 5d | 2006-12-06 A | 2006-12-12 A |  | 100% | 2006-12-06 | 2006-12-12 | 5d | start no earlier than 2006-12-06 | Warren; Cal; Renee; Ram | 160h | 160h |  |
| 35 | 1.1.1.1.6.2 | Adopters/Collaborators Review |  | 5d | 2006-12-13 A | 2006-12-19 A | 34 | 100% | 2006-12-13 | 2006-12-19 | 5d |  | Mayo; WF; AE_SIG; VCDE_WS; Arch_WS | 200h | 200h |  |
| 36 | 1.1.1.1.6.3 | Developers Update |  | 1d | 2006-12-20 A | 2006-12-20 A | 35 | 100% | 2006-12-20 | 2006-12-20 | 1d |  | Warren; Cal; Renee; Ram; Edmond | 40h | 40h |  |
| 37 | 1.1.1.1.6.4 | Submit to BAH | milestone | 0d | 2006-12-20 A | 2006-12-20 A | 36 | 100% | 2006-12-20 | 2006-12-20 | 0d |  | Edmond |  |  |  |
| 38 | 1.1.1.1.7 | **Test and QA Mgmt Plan Document (Task 2.6)** |  | 9d | 2006-12-18 A | 2006-12-29 A |  | 100% | 2006-12-18 | 2006-12-29 | 9d |  |  | 328h | 328h |  |
| 39 | 1.1.1.1.7.1 | Developer Draft |  | 3d | 2006-12-18 A | 2006-12-20 A |  | 100% | 2006-12-18 | 2006-12-20 | 3d | start no earlier than 2006-12-18 | Edmond; Vinay; Joshua; Rhett; Natasha | 120h | 120h |  |
| 40 | 1.1.1.1.7.2 | Adopters/Collobators Review |  | 5d | 2006-12-21 A | 2006-12-28 A | 39 | 100% | 2006-12-21 | 2006-12-28 | 5d |  | Mayo; WF; AE_SIG; VCDE_WS; Arch_WS | 200h | 200h |  |
| 41 | 1.1.1.1.7.3 | Developer Update |  | 1d | 2006-12-29 A | 2006-12-29 A | 40 | 100% | 2006-12-29 | 2006-12-29 | 1d |  | Edmond | 8h | 8h |  |
| 42 | 1.1.1.1.7.4 | Submit to BAH | milestone | 0d | 2006-12-29 A | 2006-12-29 A | 41 | 100% | 2006-12-29 | 2006-12-29 | 0d |  | Edmond |  |  |  |
| 43 | 1.1.1.1.8 | **caAERS F2F (Cross-Cutting WS) Meeting Planning** |  | 13d | 2006-12-01 A | 2006-12-19 A |  | 100% | 2006-12-01 | 2006-12-19 | 13d |  |  | 136h | 136h |  |
| 44 | 1.1.1.1.8.1 | Set Date |  | 1d | 2006-12-01 A | 2006-12-01 A |  | 100% | 2006-12-01 | 2006-12-01 | 1d |  | Edmond | 8h | 8h |  |
| 45 | 1.1.1.1.8.2 | Draft Agenda |  | 1d | 2006-12-15 A | 2006-12-15 A | 7 | 100% | 2006-12-15 | 2006-12-15 | 1d | start no earlier than 2006-12-15 | Ram; Vinay; Warren; Cal; Renee; Edmond | 48h | 48h |  |
| 46 | 1.1.1.1.8.3 | Review by Adopters/Collaborators |  | 2d | 2006-12-18 A | 2006-12-19 A | 45 | 100% | 2006-12-18 | 2006-12-19 | 2d |  | Mayo; WF; AE_SIG; VCDE_WS; Arch_WS | 80h | 80h |  |
| 47 | 1.1.1.1.8.4 | Finalize F2F Meeting Agenda and Details | milestone | 0d | 2006-12-19 A | 2006-12-19 A | 46 | 100% | 2006-12-19 | 2006-12-19 | 0d |  | Edmond |  |  |  |
| 48 | 1.1.1.1.9 | **Weekly Team/Developers Meeting** |  | 11d | 2006-12-11 A | 2006-12-26 A |  | 100% | 2006-12-11 | 2006-12-26 | 11d |  |  | 72h | 72h |  |
| 49 | 1.1.1.1.9.1 | Weekly Team Meeting 1 |  | 1d | 2006-12-11 A | 2006-12-11 A |  | 100% | 2006-12-11 | 2006-12-11 | 1d | start no earlier than 2006-12-11 | Edmond; Vinay; Functional Team Lead | 24h | 24h |  |
| 50 | 1.1.1.1.9.2 | Weekly Team Meeting 2 |  | 1d | 2006-12-18 A | 2006-12-18 A |  | 100% | 2006-12-18 | 2006-12-18 | 1d | start no earlier than 2006-12-18 | Edmond; Vinay; Functional Team Lead | 24h | 24h |  |
| 51 | 1.1.1.1.9.3 | Weekly Team Meeting 3 |  | 1d | 2006-12-26 A | 2006-12-26 A |  | 100% | 2006-12-26 | 2006-12-26 | 1d | start no earlier than 2006-12-25 | Edmond; Vinay; Functional Team Lead | 24h | 24h |  |

| ID | WBS | Task | Type | Duration | Start | Finish | Predecessors | Complete | Baseline start | Baseline finish | Baseline duration | Constraint | Resources | Work | Actual work |
| --- | --- | --- | --- | --- | --- | --- | --- | --- | --- | --- | --- | --- | --- | --- | --- |
| 52 | 1.1.1.1.10 | **Status and Risk Reporting** |  | 10d | 2006-12-15 A | 2006-12-29 A |  | 100% | 2006-12-15 | 2006-12-29 | 10d |  |  | 32h | 32h |
| 53 | 1.1.1.1.10.1 | Bi-weekly Risk Update in caMP (Task 1.4) | milestone | 0d | 2006-12-15 A | 2006-12-15 A |  | 100% | 2006-12-15 | 2006-12-15 | 0d | start no earlier than 2006-12-15 | Edmond |  |  |
| 54 | 1.1.1.1.10.2 | Bi-weekly Risk Matrix Update Meeting |  | 1d | 2006-12-22 A | 2006-12-22 A |  | 100% | 2006-12-22 | 2006-12-22 | 1d | start no earlier than 2006-12-22 | Edmond; Vinay | 16h | 16h |
| 55 | 1.1.1.1.10.3 | Bi-weekly Risk Update in caMP (Task 1.4) | milestone | 0d | 2006-12-29 A | 2006-12-29 A |  | 100% | 2006-12-29 | 2006-12-29 | 0d | start no earlier than 2006-12-29 | Edmond |  |  |
| 56 | 1.1.1.1.10.4 | Bi-weekly Status Update Meeting with BAH/NCI |  | 1d | 2006-12-29 A | 2006-12-29 A |  | 100% | 2006-12-29 | 2006-12-29 | 1d | start no earlier than 2006-12-29 | Edmond; Vinay | 16h | 16h |
| 57 | 1.1.1.1.10.5 | Monthly Status Report (Task 1.3) | milestone | 0d | 2006-12-29 A | 2006-12-29 A |  | 100% | 2006-12-29 | 2006-12-29 | 0d | start no earlier than 2006-12-29 | Edmond |  |  |
| 58 | 1.1.1.1.10.6 | Monthly Risk Matrix Update (Task 1.3) | milestone | 0d | 2006-12-29 A | 2006-12-29 A |  | 100% | 2006-12-29 | 2006-12-29 | 0d | must finish on 2006-12-29 |  |  |  |
| 59 | 1.1.1.1.11 | **Collaboration Management Activities** |  | 10d | 2006-12-14 A | 2006-12-28 A |  | 100% | 2006-12-14 | 2006-12-28 | 10d |  |  | 64h | 64h |
| 60 | 1.1.1.1.11.1 | Bi-Weekly AE SIG Meeting |  | 1d | 2006-12-14 A | 2006-12-14 A |  | 100% | 2006-12-14 | 2006-12-14 | 1d | start no earlier than 2006-12-14 | Edmond; Warren; Cal; Renee | 32h | 32h |
| 61 | 1.1.1.1.11.2 | Bi-Weekly AE SIG Meeting |  | 1d | 2006-12-28 A | 2006-12-28 A |  | 100% | 2006-12-28 | 2006-12-28 | 1d | start no earlier than 2006-12-28 | Edmond; Warren; Cal; Renee | 32h | 32h |
| 62 | 1.1.1.2 | **Set up Development Environment** |  | 7d | 2006-12-01 A | 2006-12-11 A |  | 100% | 2006-12-01 | 2006-12-11 | 7d |  |  | 144h | 144h |
| 63 | 1.1.1.2.1 | Set up SCM (Subversion) |  | 2d | 2006-12-01 A | 2006-12-04 A |  | 100% | 2006-12-01 | 2006-12-04 | 2d |  | Rhett; Vinay | 32h | 32h |
| 64 | 1.1.1.2.2 | Create Build Scripts (using Ant) |  | 3d | 2006-12-05 A | 2006-12-07 A | 63 | 100% | 2006-12-05 | 2006-12-07 | 3d |  | Rhett | 24h | 24h |
| 65 | 1.1.1.2.3 | Decide on Tech Stack |  | 2d | 2006-12-01 A | 2006-12-04 A |  | 100% | 2006-12-01 | 2006-12-04 | 2d |  | Rhett; Vinay; Joshua | 48h | 48h |
| 66 | 1.1.1.2.4 | Prepare Development Server |  | 5d | 2006-12-05 A | 2006-12-11 A | 65 | 100% | 2006-12-05 | 2006-12-11 | 5d |  | Vinay | 40h | 40h |
| 67 | 1.1.1.3 | **Requirements** |  | 20d | 2006-12-01 A | 2006-12-29 A |  | 100% | 2006-12-01 | 2006-12-29 | 20d |  |  | 1392h | 1392h |
| 68 | 1.1.1.3.1 | Review Existing R1 Prototype and Requirements |  | 5d | 2006-12-01 A | 2006-12-07 A |  | 100% | 2006-12-01 | 2006-12-07 | 5d |  | Vinay; Joshua; Rhett; Krikor; Padmaja; Sujith; Renee; David; Brenda; Natasha | 400h | 400h |
| 69 | 1.1.1.3.2 | Select Use Cases |  | 1d | 2006-12-08 A | 2006-12-08 A | 68 | 100% | 2006-12-08 | 2006-12-08 | 1d |  | Ram; Vinay | 16h | 16h |
| 70 | 1.1.1.3.3 | Assign Use Cases |  | 1d | 2006-12-11 A | 2006-12-11 A | 69 | 100% | 2006-12-11 | 2006-12-11 | 1d |  | Ram; Vinay | 16h | 16h |
| 71 | 1.1.1.3.4 | **Review and Update Use Case Documents (Task 2.1)** |  | 8d | 2006-12-12 A | 2006-12-21 A | 70 | 100% | 2006-12-12 | 2006-12-21 | 8d |  |  | 632h | 632h |
| 72 | 1.1.1.3.4.1 | **Create Study/Protocol** |  | 8d | 2006-12-12 A | 2006-12-21 A |  | 100% | 2006-12-12 | 2006-12-21 | 8d |  |  | 248h | 248h |
| 73 | 1.1.1.3.4.1.1 | Developer draft |  | 5d | 2006-12-12 A | 2006-12-18 A |  | 100% | 2006-12-12 | 2006-12-18 | 5d |  | Padmaja; Sujith; Renee; Dave | 160h | 160h |
| 74 | 1.1.1.3.4.1.2 | Adopters/Collaborators Review |  | 2d | 2006-12-19 A | 2006-12-20 A | 73 | 100% | 2006-12-19 | 2006-12-20 | 2d |  | Mayo; WF; AE_SIG; VCDE_WS; Arch_WS | 80h | 80h |
| 75 | 1.1.1.3.4.1.3 | Developers Update |  | 1d | 2006-12-21 A | 2006-12-21 A | 74 | 100% | 2006-12-21 | 2006-12-21 | 1d |  | John | 8h | 8h |
| 76 | 1.1.1.3.4.1.4 | Submit to BAH (Task 2.1) | milestone | 0d | 2006-12-21 A | 2006-12-21 A | 75 | 100% | 2006-12-21 | 2006-12-21 | 0d |  | Edmond |  |  |

| ID | WBS | Task | Type | Duration | Start | Finish | Predecessors | Complete | Remaining | Baseline start | Baseline finish | Baseline duration | Total slack | Resources | Work | Actual work |
| --- | --- | --- | --- | --- | --- | --- | --- | --- | --- | --- | --- | --- | --- | --- | --- | --- |
| 77 | 1.1.1.3.4.2 | **Create Participant** |  | 8d | 2006-12-12 A | 2006-12-21 A |  | 100% |  | 2006-12-12 | 2006-12-21 | 8d |  |  | 128h | 128h |
| 78 | 1.1.1.3.4.2.1 | Developer draft |  | 5d | 2006-12-12 A | 2006-12-18 A |  | 100% |  | 2006-12-12 | 2006-12-18 | 5d |  | Krikor | 40h | 40h |
| 79 | 1.1.1.3.4.2.2 | Adopters/Collaborators Review |  | 2d | 2006-12-19 A | 2006-12-20 A | 78 | 100% |  | 2006-12-19 | 2006-12-20 | 2d |  | Mayo; WF; AE_SIG; VCDE_WS; Arch_WS | 80h | 80h |
| 80 | 1.1.1.3.4.2.3 | Developers Update |  | 1d | 2006-12-21 A | 2006-12-21 A | 79 | 100% |  | 2006-12-21 | 2006-12-21 | 1d |  | John | 8h | 8h |
| 81 | 1.1.1.3.4.2.4 | Submit to BAH (Task 2.1) | milestone | 0d | 2006-12-21 A | 2006-12-21 A | 80 | 100% |  | 2006-12-21 | 2006-12-21 | 0d |  | Edmond |  |  |
| 82 | 1.1.1.3.4.3 | **Create AE** |  | 8d | 2006-12-12 A | 2006-12-21 A |  | 100% |  | 2006-12-12 | 2006-12-21 | 8d |  |  | 128h | 128h |
| 83 | 1.1.1.3.4.3.1 | Developer draft |  | 5d | 2006-12-12 A | 2006-12-18 A |  | 100% |  | 2006-12-12 | 2006-12-18 | 5d |  | Rhett | 40h | 40h |
| 84 | 1.1.1.3.4.3.2 | Adopters/Collaborators Review |  | 2d | 2006-12-19 A | 2006-12-20 A | 83 | 100% |  | 2006-12-19 | 2006-12-20 | 2d |  | Mayo; WF; AE_SIG; VCDE_WS; Arch_WS | 80h | 80h |
| 85 | 1.1.1.3.4.3.3 | Developers Update |  | 1d | 2006-12-21 A | 2006-12-21 A | 84 | 100% |  | 2006-12-21 | 2006-12-21 | 1d |  | John | 8h | 8h |
| 86 | 1.1.1.3.4.3.4 | Submit to BAH (Task 2.1) | milestone | 0d | 2006-12-21 A | 2006-12-21 A | 85 | 100% |  | 2006-12-21 | 2006-12-21 | 0d |  | Edmond |  |  |
| 87 | 1.1.1.3.4.4 | **Login** |  | 7d | 2006-12-12 A | 2006-12-20 A |  | 100% |  | 2006-12-12 | 2006-12-20 | 7d |  |  | 128h | 128h |
| 88 | 1.1.1.3.4.4.1 | Developer draft |  | 5d | 2006-12-12 A | 2006-12-18 A |  | 100% |  | 2006-12-12 | 2006-12-18 | 5d |  | Padmaja; Sujith | 80h | 80h |
| 89 | 1.1.1.3.4.4.2 | Adopters/Collaborators Review |  | 1d | 2006-12-19 A | 2006-12-19 A | 88 | 100% |  | 2006-12-19 | 2006-12-19 | 1d |  | Mayo; WF; AE_SIG; VCDE_WS; Arch_WS | 40h | 40h |
| 90 | 1.1.1.3.4.4.3 | Developers Update |  | 1d | 2006-12-20 A | 2006-12-20 A | 89 | 100% |  | 2006-12-20 | 2006-12-20 | 1d |  | John | 8h | 8h |
| 91 | 1.1.1.3.4.4.4 | Submit to BAH (Task 2.1) | milestone | 0d | 2006-12-20 A | 2006-12-20 A | 90 | 100% |  | 2006-12-20 | 2006-12-20 | 0d |  | Edmond |  |  |
| 92 | 1.1.1.3.5 | **SRS document (Task 2.2)** |  | 11d | 2006-12-14 A | 2006-12-29 A | 71SS+2d | 100% |  | 2006-12-14 | 2006-12-29 | 11d |  |  | 328h | 328h |
| 93 | 1.1.1.3.5.1 | Developer draft |  | 5d | 2006-12-14 A | 2006-12-20 A |  | 100% |  | 2006-12-14 | 2006-12-20 | 5d |  | John; Vinay; Rhett | 120h | 120h |
| 94 | 1.1.1.3.5.2 | Adopter review |  | 5d | 2006-12-21 A | 2006-12-28 A | 93 | 100% |  | 2006-12-21 | 2006-12-28 | 5d |  | Mayo; WF; AE_SIG; VCDE_WS; Arch_WS | 200h | 200h |
| 95 | 1.1.1.3.5.3 | Developer update |  | 1d | 2006-12-29 A | 2006-12-29 A | 94 | 100% |  | 2006-12-29 | 2006-12-29 | 1d |  | John | 8h | 8h |
| 96 | 1.1.1.3.5.4 | Deliver SRS document to BAH (Task 2.2) | milestone | 0d | 2006-12-29 A | 2006-12-29 A | 95 | 100% |  | 2006-12-29 | 2006-12-29 | 0d |  | Edmond |  |  |
| 97 | 1.1.1.4 | **Analysis and Design** |  | 10d | 2006-12-18 A | 2007-01-02 | 70SS+5d | 95% | 0.47d | 2006-12-18 | 2007-01-02 | 10d | 216d |  | 1488h | 1452h |
| 98 | 1.1.1.4.1 | **Design Documents (Task 2.4)** |  | 8d | 2006-12-18 A | 2006-12-28 A |  | 100% |  | 2006-12-18 | 2006-12-28 | 8d |  |  | 936h | 936h |
| 99 | 1.1.1.4.1.1 | **Create Study/Protocol Design Documents** |  | 8d | 2006-12-18 A | 2006-12-28 A |  | 100% |  | 2006-12-18 | 2006-12-28 | 8d |  |  | 256h | 256h |
| 100 | 1.1.1.4.1.1.1 | Develop appropriate UML Artifacts |  | 5d | 2006-12-18 A | 2006-12-22 A |  | 100% |  | 2006-12-18 | 2006-12-22 | 5d |  | Padmaja; Sujith | 80h | 80h |
| 101 | 1.1.1.4.1.1.2 | Developer draft |  | 5d | 2006-12-18 A | 2006-12-22 A |  | 100% |  | 2006-12-18 | 2006-12-22 | 5d |  | Padmaja; Sujith | 80h | 80h |
| 102 | 1.1.1.4.1.1.3 | Adopters/Collaborators Review |  | 2d | 2006-12-26 A | 2006-12-27 A | 101 | 100% |  | 2006-12-26 | 2006-12-27 | 2d |  | Mayo; WF; AE_SIG; VCDE_WS; Arch_WS | 80h | 80h |
| 103 | 1.1.1.4.1.1.4 | Developers Update |  | 1d | 2006-12-28 A | 2006-12-28 A | 102 | 100% |  | 2006-12-28 | 2006-12-28 | 1d |  | Padmaja; Sujith | 16h | 16h |
| 104 | 1.1.1.4.1.1.5 | Submit to BAH (Task 2.3 and 2.4) | milestone | 0d | 2006-12-28 A | 2006-12-28 A | 103 | 100% |  | 2006-12-28 | 2006-12-28 | 0d |  | Edmond |  |  |

| ID | WBS | Task | Type | Duration | Start | Finish | Predecessors | Complete | Baseline start | Baseline finish | Baseline duration | Resources | Work | Actual work |
| --- | --- | --- | --- | --- | --- | --- | --- | --- | --- | --- | --- | --- | --- | --- |
| 105 | 1.1.1.4.1.2 | **Create Participant Design Documents** |  | 8d | 2006-12-18 A | 2006-12-28 A |  | 100% | 2006-12-18 | 2006-12-28 | 8d |  | 168h | 168h |
| 106 | 1.1.1.4.1.2.1 | Develop appropriate UML Artifacts |  | 5d | 2006-12-18 A | 2006-12-22 A |  | 100% | 2006-12-18 | 2006-12-22 | 5d | Krikor | 40h | 40h |
| 107 | 1.1.1.4.1.2.2 | Developer draft |  | 5d | 2006-12-18 A | 2006-12-22 A |  | 100% | 2006-12-18 | 2006-12-22 | 5d | Krikor | 40h | 40h |
| 108 | 1.1.1.4.1.2.3 | Adopters/Collaborators Review |  | 2d | 2006-12-26 A | 2006-12-27 A | 107 | 100% | 2006-12-26 | 2006-12-27 | 2d | Mayo; WF; AE_SIG; VCDE_WS; Arch_WS | 80h | 80h |
| 109 | 1.1.1.4.1.2.4 | Developers Update |  | 1d | 2006-12-28 A | 2006-12-28 A | 108 | 100% | 2006-12-28 | 2006-12-28 | 1d | Krikor | 8h | 8h |
| 110 | 1.1.1.4.1.2.5 | Submit to BAH (Task 2.3 and 2.4) | milestone | 0d | 2006-12-28 A | 2006-12-28 A | 109 | 100% | 2006-12-28 | 2006-12-28 | 0d | Edmond |  |  |
| 111 | 1.1.1.4.1.3 | **Create AE Design Documents** |  | 8d | 2006-12-18 A | 2006-12-28 A |  | 100% | 2006-12-18 | 2006-12-28 | 8d |  | 168h | 168h |
| 112 | 1.1.1.4.1.3.1 | Develop appropriate UML Artifacts |  | 5d | 2006-12-18 A | 2006-12-22 A |  | 100% | 2006-12-18 | 2006-12-22 | 5d | Rhett | 40h | 40h |
| 113 | 1.1.1.4.1.3.2 | Developer draft |  | 5d | 2006-12-18 A | 2006-12-22 A |  | 100% | 2006-12-18 | 2006-12-22 | 5d | Rhett | 40h | 40h |
| 114 | 1.1.1.4.1.3.3 | Adopters/Collaborators Review |  | 2d | 2006-12-26 A | 2006-12-27 A | 113 | 100% | 2006-12-26 | 2006-12-27 | 2d | Mayo; WF; AE_SIG; VCDE_WS; Arch_WS | 80h | 80h |
| 115 | 1.1.1.4.1.3.4 | Developers Update |  | 1d | 2006-12-28 A | 2006-12-28 A | 114 | 100% | 2006-12-28 | 2006-12-28 | 1d | Rhett | 8h | 8h |
| 116 | 1.1.1.4.1.3.5 | Submit to BAH (Task 2.3 and 2.4) | milestone | 0d | 2006-12-28 A | 2006-12-28 A | 115 | 100% | 2006-12-28 | 2006-12-28 | 0d | Edmond |  |  |
| 117 | 1.1.1.4.1.4 | **Login Design Documents** |  | 8d | 2006-12-18 A | 2006-12-28 A |  | 100% | 2006-12-18 | 2006-12-28 | 8d |  | 216h | 216h |
| 118 | 1.1.1.4.1.4.1 | Develop appropriate UML Artifacts |  | 5d | 2006-12-18 A | 2006-12-22 A |  | 100% | 2006-12-18 | 2006-12-22 | 5d | Rhett | 40h | 40h |
| 119 | 1.1.1.4.1.4.2 | Developer draft |  | 5d | 2006-12-18 A | 2006-12-22 A |  | 100% | 2006-12-18 | 2006-12-22 | 5d | Padmaja; Sujith | 80h | 80h |
| 120 | 1.1.1.4.1.4.3 | Adopters/Collaborators Review |  | 2d | 2006-12-26 A | 2006-12-27 A | 119 | 100% | 2006-12-26 | 2006-12-27 | 2d | Mayo; WF; AE_SIG; VCDE_WS; Arch_WS | 80h | 80h |
| 121 | 1.1.1.4.1.4.4 | Developers Update |  | 1d | 2006-12-28 A | 2006-12-28 A | 120 | 100% | 2006-12-28 | 2006-12-28 | 1d | Padmaja; Sujith | 16h | 16h |
| 122 | 1.1.1.4.1.4.5 | Submit to BAH (Task 2.3 and 2.4) | milestone | 0d | 2006-12-28 A | 2006-12-28 A | 121 | 100% | 2006-12-28 | 2006-12-28 | 0d | Edmond |  |  |
| 123 | 1.1.1.4.1.5 | **UI/Mockups Design Documents** |  | 8d | 2006-12-18 A | 2006-12-28 A |  | 100% | 2006-12-18 | 2006-12-28 | 8d |  | 128h | 128h |
| 124 | 1.1.1.4.1.5.1 | Developer Draft |  | 5d | 2006-12-18 A | 2006-12-22 A |  | 100% | 2006-12-18 | 2006-12-22 | 5d | Richard | 40h | 40h |
| 125 | 1.1.1.4.1.5.2 | Adopters/Collaborators Review |  | 2d | 2006-12-26 A | 2006-12-27 A | 124 | 100% | 2006-12-26 | 2006-12-27 | 2d | Mayo; WF; AE_SIG; VCDE_WS; Arch_WS | 80h | 80h |
| 126 | 1.1.1.4.1.5.3 | Developers Update |  | 1d | 2006-12-28 A | 2006-12-28 A | 125 | 100% | 2006-12-28 | 2006-12-28 | 1d | Richard | 8h | 8h |
| 127 | 1.1.1.4.1.5.4 | Submit to BAH (Task 2.4) | milestone | 0d | 2006-12-28 A | 2006-12-28 A | 126 | 100% | 2006-12-28 | 2006-12-28 | 0d | Edmond |  |  |
| 128 | 1.1.1.4.2 | **ESB** |  | 7d | 2006-12-18 A | 2006-12-27 A |  | 100% | 2006-12-18 | 2006-12-27 | 7d |  | 112h | 112h |
| 129 | 1.1.1.4.2.1 | Evalutate technologies by prototyping |  | 7d | 2006-12-18 A | 2006-12-27 A |  | 100% | 2006-12-18 | 2006-12-27 | 7d | Vinay; Joshua | 112h | 112h |

| ID | WBS | Task | Duration | Start | Finish | Predecessors | Complete | Remaining | Baseline start | Baseline finish | Baseline duration | Total slack | Free slack | Resources | Work | Actual work |
| --- | --- | --- | --- | --- | --- | --- | --- | --- | --- | --- | --- | --- | --- | --- | --- | --- |
| 130 | 1.1.1.4.3 | **Grid service** | 7d | 2006-12-18 A | 2006-12-27 A |  | 100% |  | 2006-12-18 | 2006-12-27 | 7d |  |  |  | 112h | 112h |
| 131 | 1.1.1.4.3.1 | Evaluate caGrid 1.0 service infrastructure | 7d | 2006-12-18 A | 2006-12-27 A |  | 100% |  | 2006-12-18 | 2006-12-27 | 7d |  |  | Vinay; Joshua | 112h | 112h |
| 132 | 1.1.1.4.4 | **Database** | 3d | 2006-12-18 A | 2006-12-20 A |  | 100% |  | 2006-12-18 | 2006-12-20 | 3d |  |  |  | 96h | 96h |
| 133 | 1.1.1.4.4.1 | First draft of database structure | 3d | 2006-12-18 A | 2006-12-20 A |  | 100% |  | 2006-12-18 | 2006-12-20 | 3d |  |  | Rhett; Padmaja; Sujith; Krikor | 96h | 96h |
| 134 | 1.1.1.4.5 | **Domain model** | 9d | 2006-12-18 A | 2006-12-29 |  | 50% | 4.5d | 2006-12-18 | 2006-12-29 | 9d | 217d |  |  | 72h | 36h |
| 135 | 1.1.1.4.5.1 | Create model harmonized with BRIDG | 5d | 2006-12-18 A | 2006-12-22 |  | 50% | 2.5d | 2006-12-18 | 2006-12-22 | 5d | 194d | 0d | John | 40h | 20h |
| 136 | 1.1.1.4.5.2 | Create first draft of model | 4d | 2006-12-26 A | 2006-12-29 | 135 | 50% | 2d | 2006-12-26 | 2006-12-29 | 4d | 192d |  | John | 32h | 16h |
| 137 | 1.1.1.4.6 | **Security** | 10d | 2006-12-18 A | 2007-01-02 A |  | 100% |  | 2006-12-18 | 2007-01-02 | 10d |  |  |  | 160h | 160h |
| 138 | 1.1.1.4.6.1 | Evaluate caGrid 1.0 security infrastructure | 10d | 2006-12-18 A | 2007-01-02 A | 70 | 100% |  | 2006-12-18 | 2007-01-02 | 10d |  |  | Vinay; Joshua | 160h | 160h |
| 139 | 1.1.1.5 | **Implementation** | 5d | 2006-12-19 A | 2006-12-26 A | 97SS+1d | 100% |  | 2006-12-19 | 2006-12-26 | 5d |  |  |  | 1280h | 1280h |
| 140 | 1.1.1.5.1 | **Enterprise Service Bus** | 5d | 2006-12-19 A | 2006-12-26 A |  | 100% |  | 2006-12-19 | 2006-12-26 | 5d |  |  |  | 80h | 80h |
| 141 | 1.1.1.5.1.1 | Setup initial project | 5d | 2006-12-19 A | 2006-12-26 A |  | 100% |  | 2006-12-19 | 2006-12-26 | 5d |  |  | Vinay; Joshua | 80h | 80h |
| 142 | 1.1.1.5.2 | **Grid service** | 5d | 2006-12-19 A | 2006-12-26 A |  | 100% |  | 2006-12-19 | 2006-12-26 | 5d |  |  |  | 80h | 80h |
| 143 | 1.1.1.5.2.1 | Create grid service skeleton | 5d | 2006-12-19 A | 2006-12-26 A |  | 100% |  | 2006-12-19 | 2006-12-26 | 5d |  |  | Vinay; Joshua | 80h | 80h |
| 144 | 1.1.1.5.3 | **Create Study/Protocol** | 5d | 2006-12-19 A | 2006-12-26 A |  | 100% |  | 2006-12-19 | 2006-12-26 | 5d |  |  |  | 640h | 640h |
| 145 | 1.1.1.5.3.1 | Implement O/R mapping | 5d | 2006-12-19 A | 2006-12-26 A |  | 100% |  | 2006-12-19 | 2006-12-26 | 5d |  |  | Padmaja; Sujith | 80h | 80h |
| 146 | 1.1.1.5.3.2 | Develop StudyDAO | 5d | 2006-12-19 A | 2006-12-26 A |  | 100% |  | 2006-12-19 | 2006-12-26 | 5d |  |  | Padmaja; Sujith | 80h | 80h |
| 147 | 1.1.1.5.3.3 | Develop StudyService | 5d | 2006-12-19 A | 2006-12-26 A |  | 100% |  | 2006-12-19 | 2006-12-26 | 5d |  |  | Padmaja; Sujith | 80h | 80h |
| 148 | 1.1.1.5.3.4 | Develop controller and command objects | 5d | 2006-12-19 A | 2006-12-26 A |  | 100% |  | 2006-12-19 | 2006-12-26 | 5d |  |  | Padmaja; Sujith | 80h | 80h |
| 149 | 1.1.1.5.3.5 | Develop UI | 5d | 2006-12-19 A | 2006-12-26 A |  | 100% |  | 2006-12-19 | 2006-12-26 | 5d |  |  | Padmaja; Sujith | 80h | 80h |
| 150 | 1.1.1.5.3.6 | Develop JUnit test cases | 5d | 2006-12-19 A | 2006-12-26 A |  | 100% |  | 2006-12-19 | 2006-12-26 | 5d |  |  | Padmaja; Sujith | 80h | 80h |
| 151 | 1.1.1.5.3.7 | Develop | 5d | 2006-12-19 A | 2006-12-26 A |  | 100% |  | 2006-12-19 | 2006-12-26 | 5d |  |  | Padmaja; Sujith | 80h | 80h |
| 152 | 1.1.1.5.3.8 | Login | 5d | 2006-12-19 A | 2006-12-26 A |  | 100% |  | 2006-12-19 | 2006-12-26 | 5d |  |  | Padmaja; Sujith | 80h | 80h |
| 153 | 1.1.1.5.4 | **Create Participant** | 5d | 2006-12-19 A | 2006-12-26 A |  | 100% |  | 2006-12-19 | 2006-12-26 | 5d |  |  |  | 240h | 240h |
| 154 | 1.1.1.5.4.1 | Implement O/R mapping | 5d | 2006-12-19 A | 2006-12-26 A |  | 100% |  | 2006-12-19 | 2006-12-26 | 5d |  |  | Krikor | 40h | 40h |
| 155 | 1.1.1.5.4.2 | Develop ParticipantDAO | 5d | 2006-12-19 A | 2006-12-26 A |  | 100% |  | 2006-12-19 | 2006-12-26 | 5d |  |  | Krikor | 40h | 40h |
| 156 | 1.1.1.5.4.3 | Develop ParticipantService | 5d | 2006-12-19 A | 2006-12-26 A |  | 100% |  | 2006-12-19 | 2006-12-26 | 5d |  |  | Krikor | 40h | 40h |
| 157 | 1.1.1.5.4.4 | Develop controller and command objects | 5d | 2006-12-19 A | 2006-12-26 A |  | 100% |  | 2006-12-19 | 2006-12-26 | 5d |  |  | Krikor | 40h | 40h |
| 158 | 1.1.1.5.4.5 | Develop UI | 5d | 2006-12-19 A | 2006-12-26 A |  | 100% |  | 2006-12-19 | 2006-12-26 | 5d |  |  | Krikor | 40h | 40h |
| 159 | 1.1.1.5.4.6 | Develop JUnit test cases | 5d | 2006-12-19 A | 2006-12-26 A |  | 100% |  | 2006-12-19 | 2006-12-26 | 5d |  |  | Krikor | 40h | 40h |

| ID | WBS | Task | Type | Duration | Start | Finish | Predecessors | Complete | Remaining | Baseline start | Baseline finish | Baseline duration | Total slack | Free slack | Constraint | Resources | Work | Actual work |
| --- | --- | --- | --- | --- | --- | --- | --- | --- | --- | --- | --- | --- | --- | --- | --- | --- | --- | --- |
| 160 | 1.1.1.5.5 | **Create AE** |  | 5d | 2006-12-19 A | 2006-12-26 A |  | 100% |  | 2006-12-19 | 2006-12-26 | 5d |  |  |  |  | 240h | 240h |
| 161 | 1.1.1.5.5.1 | Implement O/R mapping |  | 5d | 2006-12-19 A | 2006-12-26 A |  | 100% |  | 2006-12-19 | 2006-12-26 | 5d |  |  |  | Rhett | 40h | 40h |
| 162 | 1.1.1.5.5.2 | Develop AdverseEventDAO |  | 5d | 2006-12-19 A | 2006-12-26 A |  | 100% |  | 2006-12-19 | 2006-12-26 | 5d |  |  |  | Rhett | 40h | 40h |
| 163 | 1.1.1.5.5.3 | Develop AdverseEventService |  | 5d | 2006-12-19 A | 2006-12-26 A |  | 100% |  | 2006-12-19 | 2006-12-26 | 5d |  |  |  | Rhett | 40h | 40h |
| 164 | 1.1.1.5.5.4 | Develop controller and command objects |  | 5d | 2006-12-19 A | 2006-12-26 A |  | 100% |  | 2006-12-19 | 2006-12-26 | 5d |  |  |  | Rhett | 40h | 40h |
| 165 | 1.1.1.5.5.5 | Develop UI |  | 5d | 2006-12-19 A | 2006-12-26 A |  | 100% |  | 2006-12-19 | 2006-12-26 | 5d |  |  |  | Rhett | 40h | 40h |
| 166 | 1.1.1.5.5.6 | Develop JUnit test cases |  | 5d | 2006-12-19 A | 2006-12-26 A |  | 100% |  | 2006-12-19 | 2006-12-26 | 5d |  |  |  | Rhett | 40h | 40h |
| 167 | 1.1.1.6 | **Testing** |  | 8d | 2006-12-19 A | 2006-12-29 |  | 22% | 6.25d | 2006-12-19 | 2006-12-29 | 8d | 217d |  |  |  | 1080.24h | 242.06h |
| 168 | 1.1.1.6.1 | **Create Functional Tests** |  | 6d | 2006-12-19 A | 2006-12-27 | 71SS+5d | 25% | 4.5d | 2006-12-19 | 2006-12-27 | 6d | 219d |  |  |  | 968.24h | 242.06h |
| 169 | 1.1.1.6.1.1 | Create Study |  | 5d | 2006-12-19 A | 2006-12-26 |  | 25% | 3.75d | 2006-12-19 | 2006-12-26 | 5d | 195d |  |  | Renee; David; Brenda; Natasha; Mayo; WF | 240.24h | 60.06h |
| 170 | 1.1.1.6.1.2 | Create Participant |  | 5d | 2006-12-19 A | 2006-12-26 |  | 25% | 3.75d | 2006-12-19 | 2006-12-26 | 5d | 195d |  |  | Renee; David; Brenda; Natasha; Mayo; WF | 240h | 60h |
| 171 | 1.1.1.6.1.3 | Login |  | 5d | 2006-12-19 A | 2006-12-26 |  | 25% | 3.75d | 2006-12-19 | 2006-12-26 | 5d | 195d |  |  | Renee; David; Brenda; Natasha; Mayo; WF | 240h | 60h |
| 172 | 1.1.1.6.1.4 | Create AE |  | 5d | 2006-12-19 A | 2006-12-26 |  | 25% | 3.75d | 2006-12-19 | 2006-12-26 | 5d | 194.25d | 0d |  | Renee; David; Brenda; Natasha; Mayo; WF | 240h | 60h |
| 173 | 1.1.1.6.1.5 | RTM |  | 1d | 2006-12-27 A | 2006-12-27 | 172, 93 | 25% | 0.75d | 2006-12-27 | 2006-12-27 | 1d | 194d |  |  | John | 8h | 2h |
| 174 | 1.1.1.6.2 | **Final Tests of Iteration** |  | 3d | 2006-12-27 | 2006-12-29 |  |  |  | 2006-12-27 | 2006-12-29 | 3d | 212.51d |  |  |  | 112h |  |
| 175 | 1.1.1.6.2.1 | Deploy Prototype (Task 2.5) |  | 1d | 2006-12-27 | 2006-12-27 | 139 |  |  | 2006-12-27 | 2006-12-27 | 1d | 159.58d | 0d |  | Joshua; Rhett | 16h |  |
| 176 | 1.1.1.6.2.2 | Validation and Acceptance Testing |  | 2d | 2006-12-28 | 2006-12-29 | 175 |  |  | 2006-12-28 | 2006-12-29 | 2d | 159.58d | 0d |  | Renee; David; Brenda; Natasha; Mayo; WF | 96h |  |
| 177 | 1.1.1.6.2.3 | Submit Test Results Report (Task 2.7) | milestone | 0d | 2006-12-29 | 2006-12-29 | 176 |  |  | 2006-12-29 | 2006-12-29 | 0d | 159.58d | 0d |  |  |  |  |
| 178 | 1.1.2 | **Iteration 2** |  | 46d | 2006-12-18 A | 2007-02-21 | 177 | 90% | 4.49d | 2007-01-02 | 2007-02-01 | 23d | 180d |  |  |  | 5072h | 4516h |
| 179 | 1.1.2.1 | Start Iteration 2 | milestone | 0d | 2007-01-02 | 2007-01-02 |  |  |  |  |  |  | 216.73d | 0d | start no earlier than 2007-01-02 |  |  |  |
| 180 | 1.1.2.2 | **Project Management** |  | 43d | 2006-12-18 A | 2007-02-16 | 179SS | 99% | 0.27d | 2007-01-02 | 2007-02-01 | 23d | 183d |  |  |  | 1088h | 1084h |
| 181 | 1.1.2.2.1 | Update Project Plan |  | 5d | 2007-01-02 A | 2007-01-08 A |  | 100% |  | 2007-01-02 | 2007-01-08 | 5d |  |  |  | Edmond | 40h | 40h |
| 182 | 1.1.2.2.2 | **Detailed Construction and Transition Plan** |  | 20d | 2007-01-22 A | 2007-02-16 A |  | 100% |  | 2007-01-22 | 2007-02-01 | 9d |  |  |  |  | 480h | 480h |
| 183 | 1.1.2.2.2.1 | Prepare Detailed Plan for Construction and Transition Phases |  | 5d | 2007-01-22 A | 2007-01-26 A |  | 100% |  | 2007-01-22 | 2007-01-26 | 5d |  |  | start no earlier than 2007-01-22 | Edmond; Ram; Vinay; Warren; Cal | 200h | 200h |
| 184 | 1.1.2.2.2.2 | Deliver Plan to BAH (Task 2.9) | milestone | 0d | 2007-01-26 A | 2007-01-26 A | 183 | 100% |  | 2007-02-01 | 2007-02-01 | 0d |  |  |  | Edmond |  |  |
| 185 | 1.1.2.2.2.3 | Adopter Review |  | 10d | 2007-01-29 A | 2007-02-09 A | 184 | 100% |  |  |  |  |  |  |  | Mayo; WF | 160h | 160h |
| 186 | 1.1.2.2.2.4 | Formal Review by BAH |  | 15d | 2007-01-29 A | 2007-02-16 A | 184 | 100% |  |  |  |  |  |  |  | BAH | 120h | 120h |

| ID | WBS | Task | Type | Duration | Start | Finish | Predecessors | Complete | Remaining | Baseline start | Baseline finish | Baseline duration | Total slack | Constraint | Resources | Work | Actual work |
| --- | --- | --- | --- | --- | --- | --- | --- | --- | --- | --- | --- | --- | --- | --- | --- | --- | --- |
| 187 | 1.1.2.2.3 | **Change Control Board Plan and Charter (Task 2.10)** |  | 32.75d | 2006-12-18 A | 2007-02-02 A |  | 100% |  | 2006-12-18 | 2007-01-03 | 11d |  |  |  | 400h | 400h |
| 188 | 1.1.2.2.3.1 | Prepare CCB Charter |  | 10d | 2006-12-18 A | 2007-01-12 A |  | 100% |  | 2006-12-18 | 2006-12-22 | 5d |  | start no earlier than 2006-12-18 | Edmond | 80h | 80h |
| 189 | 1.1.2.2.3.2 | Submit to BAH | milestone | 0d | 2007-01-12 A | 2007-01-12 A | 188 | 100% |  | 2007-01-03 | 2007-01-03 | 0d |  |  | Edmond |  |  |
| 190 | 1.1.2.2.3.3 | Adopters/Collobators Review |  | 5d | 2007-01-12 A | 2007-01-19 A | 189 | 100% |  | 2006-12-26 | 2007-01-02 | 5d |  |  | Mayo; WF; AE_SIG; VCDE_WS; Arch_WS | 200h | 200h |
| 191 | 1.1.2.2.3.4 | Formal Review by BAH |  | 15d | 2007-01-12 A | 2007-02-02 A | 189 | 100% |  |  |  |  |  |  | BAH | 120h | 120h |
| 192 | 1.1.2.2.4 | **Weekly Team/Developers Meeting** |  | 16d | 2007-01-08 A | 2007-01-29 A |  | 100% |  | 2007-01-08 | 2007-01-29 | 16d |  |  |  | 96h | 96h |
| 193 | 1.1.2.2.4.1 | Weekly Team Meeting 1 |  | 1d | 2007-01-08 A | 2007-01-08 A |  | 100% |  | 2007-01-08 | 2007-01-08 | 1d |  | start no earlier than 2007-01-08 | Edmond; Vinay; Functional Team Lead | 24h | 24h |
| 194 | 1.1.2.2.4.2 | Weekly Team Meeting 2 |  | 1d | 2007-01-15 A | 2007-01-15 A |  | 100% |  | 2007-01-15 | 2007-01-15 | 1d |  | start no earlier than 2007-01-15 | Edmond; Vinay; Functional Team Lead | 24h | 24h |
| 195 | 1.1.2.2.4.3 | Weekly Team Meeting 3 |  | 1d | 2007-01-22 A | 2007-01-22 A |  | 100% |  | 2007-01-22 | 2007-01-22 | 1d |  | start no earlier than 2007-01-22 | Edmond; Vinay; Functional Team Lead | 24h | 24h |
| 196 | 1.1.2.2.4.4 | Weekly Team Meeting 4 |  | 1d | 2007-01-29 A | 2007-01-29 A |  | 100% |  | 2007-01-29 | 2007-01-29 | 1d |  | start no earlier than 2007-01-29 | Edmond; Vinay; Functional Team Lead | 24h | 24h |
| 197 | 1.1.2.2.5 | **Status and Risk Reporting** |  | 14d | 2007-01-12 A | 2007-01-31 |  | 93% | 1d | 2007-01-12 | 2007-01-31 | 14d | 195d |  |  | 72h | 68h |
| 198 | 1.1.2.2.5.1 | Bi-weekly Risk Update in caMP (Task 1.4) |  | 1d | 2007-01-12 A | 2007-01-12 A |  | 100% |  | 2007-01-12 | 2007-01-12 | 1d |  | start no earlier than 2007-01-12 | Edmond | 8h | 8h |
| 199 | 1.1.2.2.5.2 | Bi-weekly Risk Matrix Update Meeting |  | 1d | 2007-01-12 A | 2007-01-12 A |  | 100% |  | 2007-01-12 | 2007-01-12 | 1d |  | start no earlier than 2007-01-12 | Edmond | 8h | 8h |
| 200 | 1.1.2.2.5.3 | Bi-weekly Risk Update in caMP (Task 1.4) |  | 1d | 2007-01-26 A | 2007-01-26 A |  | 100% |  | 2007-01-26 | 2007-01-26 | 1d |  | start no earlier than 2007-01-26 | Edmond | 8h | 8h |
| 201 | 1.1.2.2.5.4 | Bi-weekly Status Update Meeting with BAH/NCI |  | 1d | 2007-01-26 A | 2007-01-26 A |  | 100% |  | 2007-01-26 | 2007-01-26 | 1d |  | start no earlier than 2007-01-26 | Edmond; Ram; Vinay | 24h | 24h |
| 202 | 1.1.2.2.5.5 | Monthly Status Report (Task 1.3) |  | 1d | 2007-01-31 A | 2007-01-31 A |  | 100% |  | 2007-01-31 | 2007-01-31 | 1d |  | start no earlier than 2007-01-31 | Edmond | 8h | 8h |
| 203 | 1.1.2.2.5.6 | Monthly Risk Matrix Update (Task 1.3) |  | 1d | 2007-01-31 A | 2007-01-31 A |  | 100% |  | 2007-01-31 | 2007-01-31 | 1d |  | start no earlier than 2007-01-31 | Edmond | 8h | 8h |
| 204 | 1.1.2.2.5.7 | Adopters Collaboration Report (Task 1.7) |  | 1d | 2007-01-31 A | 2007-01-31 |  | 50% | 0.5d | 2007-01-31 | 2007-01-31 | 1d | 195d | start no earlier than 2007-01-31 | Edmond | 8h | 4h |
| 205 | 1.1.2.2.6 | **Collaboration Management Activities** |  | 11d | 2007-01-11 A | 2007-01-25 A |  | 100% |  | 2007-01-11 | 2007-01-25 | 11d |  |  |  |  |  |
| 206 | 1.1.2.2.6.1 | Bi-Weekly AE SIG Meeting |  | 1d | 2007-01-11 A | 2007-01-11 A |  | 100% |  | 2007-01-11 | 2007-01-11 | 1d |  | start no earlier than 2007-01-11 |  |  |  |
| 207 | 1.1.2.2.6.2 | Adopters Mtg |  | 1d | 2007-01-18 A | 2007-01-18 A |  | 100% |  |  |  |  |  | start no earlier than 2007-01-18 |  |  |  |
| 208 | 1.1.2.2.6.3 | Bi-Weekly AE SIG Meeting |  | 1d | 2007-01-25 A | 2007-01-25 A |  | 100% |  | 2007-01-25 | 2007-01-25 | 1d |  | start no earlier than 2007-01-25 |  |  |  |
| 209 | 1.1.2.3 | **Requirements** |  | 32d | 2007-01-02 A | 2007-02-14 A |  | 100% |  | 2007-01-02 | 2007-01-23 | 16d |  |  |  | 1088h | 1088h |
| 210 | 1.1.2.3.1 | Face-to-Face Meeting |  | 2d | 2007-01-04 A | 2007-01-05 A |  | 100% |  | 2007-01-04 | 2007-01-05 | 2d |  | must start on 2007-01-04 | Ram; Vinay; Warren; Cal; Renee; David; John; Rhett; Joshua | 144h | 144h |
| 211 | 1.1.2.3.2 | F2F Meeting Notes (Task 1.5) |  | 2d | 2007-01-08 A | 2007-01-09 A | 210 | 100% |  | 2007-01-08 | 2007-01-09 | 2d |  |  | Edmond | 16h | 16h |
| 212 | 1.1.2.3.3 | Use Case Selection |  | 2d | 2007-01-02 A | 2007-01-03 A |  | 100% |  | 2007-01-02 | 2007-01-03 | 2d |  |  | Ram; Vinay; Warren; Cal | 64h | 64h |
| 213 | 1.1.2.3.4 | Use Case Assignments for Iteration 2 |  | 1d | 2007-01-04 A | 2007-01-04 A | 212 | 100% |  | 2007-01-04 | 2007-01-04 | 1d |  |  | Vinay | 8h | 8h |

| ID | WBS | Task | Type | Duration | Start | Finish | Predecessors | Complete | Remaining | Baseline start | Baseline finish | Baseline duration | Total slack | Resources | Work | Actual work |
| --- | --- | --- | --- | --- | --- | --- | --- | --- | --- | --- | --- | --- | --- | --- | --- | --- |
| 214 | 1.1.2.3.5 | **Use Case Specification and Realization (Task 2.1)** |  | 17d | 2007-01-02 A | 2007-01-24 A |  | 100% |  | 2007-01-05 | 2007-01-12 | 6d |  |  | 600h | 600h |
| 215 | 1.1.2.3.5.1 | **Protocol Abstraction** |  | 14d | 2007-01-02 A | 2007-01-19 A |  | 100% |  |  |  |  |  |  | 192h | 192h |
| 216 | 1.1.2.3.5.1.1 | Developer draft |  | 5d | 2007-01-02 A | 2007-01-08 A |  | 100% |  |  |  |  |  | Sean; Krikor | 80h | 80h |
| 217 | 1.1.2.3.5.1.2 | Adopters/Collobators Review |  | 5d | 2007-01-09 A | 2007-01-15 A | 216 | 100% |  |  |  |  |  | Mayo; WF | 80h | 80h |
| 218 | 1.1.2.3.5.1.3 | Developer Update |  | 4d | 2007-01-16 A | 2007-01-19 A | 217 | 100% |  |  |  |  |  | Sean | 32h | 32h |
| 219 | 1.1.2.3.5.2 | **AE Data Collection** |  | 14d | 2007-01-02 A | 2007-01-19 A |  | 100% |  |  |  |  |  |  | 192h | 192h |
| 220 | 1.1.2.3.5.2.1 | Developer draft |  | 5d | 2007-01-02 A | 2007-01-08 A |  | 100% |  |  |  |  |  | Sean; Rhett | 80h | 80h |
| 221 | 1.1.2.3.5.2.2 | Adopters/Collobators Review |  | 5d | 2007-01-09 A | 2007-01-15 A | 220 | 100% |  |  |  |  |  | Mayo; WF | 80h | 80h |
| 222 | 1.1.2.3.5.2.3 | Developer Update |  | 4d | 2007-01-16 A | 2007-01-19 A | 221 | 100% |  |  |  |  |  | Sean | 32h | 32h |
| 223 | 1.1.2.3.5.3 | **Triggers/Notification** |  | 14d | 2007-01-02 A | 2007-01-19 A |  | 100% |  |  |  |  |  |  | 192h | 192h |
| 224 | 1.1.2.3.5.3.1 | Developer draft |  | 5d | 2007-01-02 A | 2007-01-08 A |  | 100% |  |  |  |  |  | Sean; Rhett | 80h | 80h |
| 225 | 1.1.2.3.5.3.2 | Adopters/Collobators Review |  | 5d | 2007-01-09 A | 2007-01-15 A | 224 | 100% |  |  |  |  |  | Mayo; WF | 80h | 80h |
| 226 | 1.1.2.3.5.3.3 | Developer Update |  | 4d | 2007-01-16 A | 2007-01-19 A | 225 | 100% |  |  |  |  |  | Sean | 32h | 32h |
| 227 | 1.1.2.3.5.4 | Update Use Case Document |  | 3d | 2007-01-22 A | 2007-01-24 A | 218, 222, 226 | 100% |  |  |  |  |  | Sean | 24h | 24h |
| 228 | 1.1.2.3.5.5 | Submit Updated Use Case Document to BAH (Task 2.1) | milestone | 0d | 2007-01-24 A | 2007-01-24 A | 227 | 100% |  |  |  |  |  |  |  |  |
| 229 | 1.1.2.3.6 | **SRS document (Task 2.2)** |  | 32d | 2007-01-02 A | 2007-02-14 A |  | 100% |  | 2007-01-09 | 2007-01-23 | 11d |  |  | 256h | 256h |
| 230 | 1.1.2.3.6.1 | Developer draft |  | 5d | 2007-01-02 A | 2007-01-08 A |  | 100% |  | 2007-01-09 | 2007-01-15 | 5d |  | Sean | 40h | 40h |
| 231 | 1.1.2.3.6.2 | Adopter review |  | 5d | 2007-01-09 A | 2007-01-15 A | 230 | 100% |  | 2007-01-16 | 2007-01-22 | 5d |  | Sean | 40h | 40h |
| 232 | 1.1.2.3.6.3 | Developer update |  | 7d | 2007-01-16 A | 2007-01-24 A | 231 | 100% |  | 2007-01-23 | 2007-01-23 | 1d |  | Sean | 56h | 56h |
| 233 | 1.1.2.3.6.4 | Deliver SRS document to BAH (Task 2.2) | milestone | 0d | 2007-01-24 A | 2007-01-24 A | 232 | 100% |  | 2007-01-23 | 2007-01-23 | 0d |  | Sean |  |  |
| 234 | 1.1.2.3.6.5 | Formal Review by BAH |  | 15d | 2007-01-25 A | 2007-02-14 A | 233 | 100% |  |  |  |  |  | BAH | 120h | 120h |
| 235 | 1.1.2.4 | **Analysis and Design** |  | 37d | 2007-01-02 A | 2007-02-21 |  | 50% | 18.4d | 2007-01-12 | 2007-01-26 | 11d | 180d |  | 968h | 416h |
| 236 | 1.1.2.4.1 | **Design Documents** |  | 28d | 2007-01-09 A | 2007-02-15 | 214SS+5d | 72% | 7.78d | 2007-01-12 | 2007-01-23 | 8d | 184d |  | 432h | 312h |
| 237 | 1.1.2.4.1.1 | **Protocol Abstraction** |  | 13d | 2007-01-09 A | 2007-01-25 A |  | 100% |  |  |  |  |  |  | 104h | 104h |
| 238 | 1.1.2.4.1.1.1 | Develop appropriate UML Artifacts |  | 5d | 2007-01-09 A | 2007-01-15 A |  | 100% |  |  |  |  |  | Krikor | 40h | 40h |
| 239 | 1.1.2.4.1.1.2 | Create Design Document |  | 5d | 2007-01-16 A | 2007-01-22 A | 238 | 100% |  |  |  |  |  | Krikor | 40h | 40h |
| 240 | 1.1.2.4.1.1.3 | Adopters/Collaborators Review |  | 2d | 2007-01-23 A | 2007-01-24 A | 239 | 100% |  |  |  |  |  | Krikor | 16h | 16h |
| 241 | 1.1.2.4.1.1.4 | Developers Update |  | 1d | 2007-01-25 A | 2007-01-25 A | 240 | 100% |  |  |  |  |  | Krikor | 8h | 8h |

| ID | WBS | Task | Type | Duration | Start | Finish | Predecessors | Complete | Remaining | Baseline start | Baseline finish | Baseline duration | Total slack | Free slack | Resources | Work | Actual work |
| --- | --- | --- | --- | --- | --- | --- | --- | --- | --- | --- | --- | --- | --- | --- | --- | --- | --- |
| 242 | 1.1.2.4.1.2 | **AE Data Collection** |  | 13d | 2007-01-09 A | 2007-01-25 A |  | 100% |  |  |  |  |  |  |  | 104h | 104h |
| 243 | 1.1.2.4.1.2.1 | Develop appropriate UML Artifacts |  | 5d | 2007-01-09 A | 2007-01-15 A |  | 100% |  |  |  |  |  |  | Rhett | 40h | 40h |
| 244 | 1.1.2.4.1.2.2 | Create Design Document |  | 5d | 2007-01-16 A | 2007-01-22 A | 243 | 100% |  |  |  |  |  |  | Rhett | 40h | 40h |
| 245 | 1.1.2.4.1.2.3 | Adopters/Collaborators Review |  | 2d | 2007-01-23 A | 2007-01-24 A | 244 | 100% |  |  |  |  |  |  | Rhett | 16h | 16h |
| 246 | 1.1.2.4.1.2.4 | Developers Update |  | 1d | 2007-01-25 A | 2007-01-25 A | 245 | 100% |  |  |  |  |  |  | Rhett | 8h | 8h |
| 247 | 1.1.2.4.1.3 | **Triggers/Notification** |  | 13d | 2007-01-09 A | 2007-01-25 A |  | 100% |  |  |  |  |  |  |  | 104h | 104h |
| 248 | 1.1.2.4.1.3.1 | Develop appropriate UML Artifacts |  | 5d | 2007-01-09 A | 2007-01-15 A |  | 100% |  |  |  |  |  |  | Sujith | 40h | 40h |
| 249 | 1.1.2.4.1.3.2 | Create Design Document |  | 5d | 2007-01-16 A | 2007-01-22 A | 248 | 100% |  |  |  |  |  |  | Sujith | 40h | 40h |
| 250 | 1.1.2.4.1.3.3 | Adopters/Collaborators Review |  | 2d | 2007-01-23 A | 2007-01-24 A | 249 | 100% |  |  |  |  |  |  | Sujith | 16h | 16h |
| 251 | 1.1.2.4.1.3.4 | Developers Update |  | 1d | 2007-01-25 A | 2007-01-25 A | 250 | 100% |  |  |  |  |  |  | Sujith | 8h | 8h |
| 252 | 1.1.2.4.1.4 | Deliver Design document to BAH (Task 2.2) | milestone | 0d | 2007-01-25 | 2007-01-25 | 241, 246, 251 |  |  | 2007-01-23 | 2007-01-23 | 0d | 199d |  | Edmond |  |  |
| 253 | 1.1.2.4.1.5 | Deliver UML to BAH (Task 2.3) | milestone | 0d | 2007-01-25 | 2007-01-25 | 241, 246, 251 |  |  |  |  |  | 184d | 0d | Edmond |  |  |
| 254 | 1.1.2.4.1.6 | Formal Review by BAH |  | 15d | 2007-01-26 | 2007-02-15 | 253 |  |  |  |  |  | 184d |  | BAH | 120h |  |
| 255 | 1.1.2.4.2 | **Domain Model** |  | 3d | 2007-01-02 A | 2007-01-04 |  | 75% | 0.75d |  |  |  | 214d |  |  | 24h | 18h |
| 256 | 1.1.2.4.2.1 | Update Model/BRIDG Harmonization |  | 3d | 2007-01-02 A | 2007-01-04 |  | 75% | 0.75d |  |  |  | 214d |  | Ram | 24h | 18h |
| 257 | 1.1.2.4.3 | **Technical/Architecture Guide** |  | 32d | 2007-01-09 A | 2007-02-21 |  | 11% | 28.5d | 2007-01-12 | 2007-01-26 | 11d | 180d |  |  | 512h | 86h |
| 258 | 1.1.2.4.3.1 | Prepare draft of Tech/Arch Guide |  | 9d | 2007-01-09 A | 2007-01-19 | 214SS+5d | 25% | 6.75d | 2007-01-12 | 2007-01-18 | 5d | 181.25d | 0d | Vinay; Joshua | 144h | 36h |
| 259 | 1.1.2.4.3.2 | Adopter review |  | 5d | 2007-01-22 A | 2007-01-26 | 258 | 25% | 3.75d | 2007-01-19 | 2007-01-25 | 5d | 180d | 0d | Mayo; WF; AE_SIG; VCDE_WS; Arch_WS | 200h | 50h |
| 260 | 1.1.2.4.3.3 | Developer update |  | 3d | 2007-01-29 | 2007-01-31 | 259 |  |  | 2007-01-26 | 2007-01-26 | 1d | 180d | 0d | Vinay; Joshua | 48h |  |
| 261 | 1.1.2.4.3.4 | Deliver to BAH (Task 2.8) | milestone | 0d | 2007-01-31 | 2007-01-31 | 260 |  |  | 2007-01-26 | 2007-01-26 | 0d | 180d | 0d | Edmond |  |  |
| 262 | 1.1.2.4.3.5 | Formal Review by BAH |  | 15d | 2007-02-01 | 2007-02-21 | 261 |  |  |  |  |  | 180d |  | BAH | 120h |  |
| 263 | 1.1.2.5 | **Implementation** |  | 19d | 2007-01-03 A | 2007-01-29 A | 214SS+1d | 100% |  | 2007-01-08 | 2007-01-24 | 13d |  |  |  | 1392h | 1392h |
| 264 | 1.1.2.5.1 | **Web interface** |  | 9d | 2007-01-03 A | 2007-01-15 A |  | 100% |  | 2007-01-08 | 2007-01-19 | 10d |  |  |  | 72h | 72h |
| 265 | 1.1.2.5.1.1 | Second web interface iteration |  | 9d | 2007-01-03 A | 2007-01-15 A |  | 100% |  | 2007-01-08 | 2007-01-19 | 10d |  |  | Richard | 72h | 72h |

| ID | WBS | Task | Type | Duration | Start | Finish | Predecessors | Complete | Baseline start | Baseline finish | Baseline duration | Constraint | Resources | Work | Actual work |
| --- | --- | --- | --- | --- | --- | --- | --- | --- | --- | --- | --- | --- | --- | --- | --- |
| 266 | 1.1.2.5.2 | **Enterprise Service Bus** |  | 10d | 2007-01-03 A | 2007-01-16 A |  | 100% | 2007-01-08 | 2007-01-19 | 10d |  |  | 160h | 160h |
| 267 | 1.1.2.5.2.1 | Second ESB Iteration |  | 10d | 2007-01-03 A | 2007-01-16 A |  | 100% | 2007-01-08 | 2007-01-19 | 10d |  | Vinay; Joshua | 160h | 160h |
| 268 | 1.1.2.5.3 | **Grid service** |  | 13d | 2007-01-03 A | 2007-01-19 A |  | 100% | 2007-01-08 | 2007-01-24 | 13d |  |  | 208h | 208h |
| 269 | 1.1.2.5.3.1 | Implement Grid Service |  | 13d | 2007-01-03 A | 2007-01-19 A |  | 100% | 2007-01-08 | 2007-01-24 | 13d |  | Vinay; Joshua | 208h | 208h |
| 270 | 1.1.2.5.4 | **Implement Use Cases** |  | 15d | 2007-01-09 A | 2007-01-29 A |  | 100% | 2007-01-08 | 2007-01-23 | 12d |  |  | 952h | 952h |
| 271 | 1.1.2.5.4.1 | **Protocol Abstraction** |  | 12d | 2007-01-09 A | 2007-01-24 A | 237SS | 100% |  |  |  |  |  | 416h | 416h |
| 272 | 1.1.2.5.4.1.1 | UI - Incorporate HTML and CSS |  | 5d | 2007-01-16 A | 2007-01-22 A | 265 | 100% |  |  |  |  | Krikor | 40h | 40h |
| 273 | 1.1.2.5.4.1.2 | Implement O/R mapping |  | 10d | 2007-01-09 A | 2007-01-22 A |  | 100% | 2007-01-08 | 2007-01-19 | 10d |  | Krikor | 80h | 80h |
| 274 | 1.1.2.5.4.1.3 | Develop DAO |  | 10d | 2007-01-11 A | 2007-01-24 A | 273SS+2d | 100% | 2007-01-10 | 2007-01-23 | 10d |  | Krikor | 80h | 80h |
| 275 | 1.1.2.5.4.1.4 | Develop Service |  | 10d | 2007-01-11 A | 2007-01-24 A | 273SS+2d | 100% | 2007-01-10 | 2007-01-23 | 10d |  | Krikor | 80h | 80h |
| 276 | 1.1.2.5.4.1.5 | Develop controller and command objects |  | 10d | 2007-01-11 A | 2007-01-24 A | 273SS+2d | 100% | 2007-01-10 | 2007-01-23 | 10d |  | Krikor | 80h | 80h |
| 277 | 1.1.2.5.4.1.6 | Develop JUnit test cases |  | 7d | 2007-01-11 A | 2007-01-19 A | 273SS+2d | 100% | 2007-01-10 | 2007-01-18 | 7d |  | Krikor | 56h | 56h |
| 278 | 1.1.2.5.4.2 | **AE Data Collection** |  | 11.25d | 2007-01-09 A | 2007-01-24 A | 242SS | 100% |  |  |  |  |  | 416h | 416h |
| 279 | 1.1.2.5.4.2.1 | UI - Incorporate HTML and CSS |  | 5d | 2007-01-16 A | 2007-01-22 A | 265 | 100% |  |  |  |  | Rhett | 40h | 40h |
| 280 | 1.1.2.5.4.2.2 | Implement O/R mapping |  | 10d | 2007-01-09 A | 2007-01-22 A |  | 100% |  |  |  |  | Rhett | 80h | 80h |
| 281 | 1.1.2.5.4.2.3 | Develop DAO |  | 10d | 2007-01-09 A | 2007-01-24 A | 280SS+2d | 100% |  |  |  |  | Rhett | 80h | 80h |
| 282 | 1.1.2.5.4.2.4 | Develop Service |  | 10d | 2007-01-09 A | 2007-01-24 A | 280SS+2d | 100% |  |  |  |  | Rhett | 80h | 80h |
| 283 | 1.1.2.5.4.2.5 | Develop controller and command objects |  | 10d | 2007-01-09 A | 2007-01-24 A | 280SS+2d | 100% |  |  |  |  | Rhett | 80h | 80h |
| 284 | 1.1.2.5.4.2.6 | Develop JUnit test cases |  | 7d | 2007-01-09 A | 2007-01-19 A | 280SS+2d | 100% |  |  |  |  | Rhett | 56h | 56h |
| 285 | 1.1.2.5.4.3 | **Triggers/Notification** |  | 15d | 2007-01-09 A | 2007-01-29 A | 247SS | 100% |  |  |  |  |  | 120h | 120h |
| 286 | 1.1.2.5.4.3.1 | JBOSS Rules Setup/Development |  | 15d | 2007-01-09 A | 2007-01-29 A |  | 100% |  |  |  |  | Sujith | 120h | 120h |
| 287 | 1.1.2.6 | **Testing** |  | 26d | 2007-01-17 A | 2007-02-21 A |  | 100% | 2007-01-12 | 2007-01-26 | 11d |  |  | 336h | 336h |
| 288 | 1.1.2.6.1 | **Test Plan** |  | 18d | 2007-01-17 A | 2007-02-09 A |  | 100% |  |  |  |  |  | 152h | 152h |
| 289 | 1.1.2.6.1.1 | Update Test Plan Document (Task 2.6) |  | 3d | 2007-01-17 A | 2007-01-19 A |  | 100% | 2007-01-08 | 2007-01-12 | 5d | start no earlier than 2007-01-17 | Vinay; Ram | 32h | 32h |
| 290 | 1.1.2.6.1.2 | Submit to BAH | milestone | 0d | 2007-01-19 A | 2007-01-19 A | 289 | 100% |  |  |  |  | Edmond |  |  |
| 291 | 1.1.2.6.1.3 | Formal Review by BAH |  | 15d | 2007-01-22 A | 2007-02-09 A | 290 | 100% |  |  |  |  | BAH | 120h | 120h |

| ID | WBS | Task | Type | Duration | Start | Finish | Predecessors | Complete | Remaining | Baseline start | Baseline finish | Baseline duration | Total slack | Constraint | Resources | Work | Actual work |
| --- | --- | --- | --- | --- | --- | --- | --- | --- | --- | --- | --- | --- | --- | --- | --- | --- | --- |
| 292 | 1.1.2.6.2 | **Final Tests of Iteration** |  | 17d | 2007-01-30 A | 2007-02-21 A |  | 100% |  | 2007-01-24 | 2007-01-26 | 2d |  |  |  | 184h | 184h |
| 293 | 1.1.2.6.2.1 | Testing |  | 2d | 2007-01-30 A | 2007-01-31 A | 263 | 100% |  | 2007-01-25 | 2007-01-26 | 2d |  |  | Renee; David; Brenda; Natasha | 64h | 64h |
| 294 | 1.1.2.6.2.2 | Submit Test Results Report (Task 2.7) | milestone | 0d | 2007-01-31 A | 2007-01-31 A | 293 | 100% |  | 2007-01-26 | 2007-01-26 | 0d |  |  |  |  |  |
| 295 | 1.1.2.6.2.3 | Formal Review of Test results Report |  | 15d | 2007-02-01 A | 2007-02-21 A | 294 | 100% |  |  |  |  |  |  | BAH | 120h | 120h |
| 296 | 1.1.2.7 | **Deployment** |  | 26d | 2006-12-29 A | 2007-02-06 A |  | 100% |  |  |  |  |  |  |  | 200h | 200h |
| 297 | 1.1.2.7.1 | Submit prototype code (Task 2.5) | milestone | 0d | 2006-12-29 A | 2006-12-29 A |  | 100% |  |  |  |  |  |  | Ram |  |  |
| 298 | 1.1.2.7.2 | Formal Review of Code by BAH |  | 15d | 2007-01-02 A | 2007-01-22 A | 297 | 100% |  |  |  |  |  |  | BAH | 120h | 120h |
| 299 | 1.1.2.7.3 | Draft Installation Guide |  | 3d | 2007-01-02 A | 2007-01-04 A |  | 100% |  |  |  |  |  |  | Krikor; Vinay | 48h | 48h |
| 300 | 1.1.2.7.4 | Deploy Prototype for Iteration 2 at Mayo and WF |  | 1d | 2007-01-30 A | 2007-01-30 A | 263 | 100% |  | 2007-01-24 | 2007-01-24 | 0d |  |  | Vinay; Mayo; WF | 24h | 24h |
| 301 | 1.1.2.7.5 | Deploy Prototype / Make URL Public |  | 1d | 2007-02-06 A | 2007-02-06 A | 263FS+5d | 100% |  |  |  |  |  |  | Vinay | 8h | 8h |
| 302 | 1.1.3 | caBIG Annual Meeting |  | 3d | 2007-02-05 A | 2007-02-07 A |  | 100% |  |  |  |  |  | must start on 2007-02-05 |  |  |  |
| 303 | 1.2 | **Construction Phase** |  | 163d? | 2007-02-01 A | 2007-09-17 |  | 11% | 144.53d? | 2007-02-01 | 2007-09-12 | 160d | 32d |  |  | 13752h | 2108h |
| 304 | 1.2.1 | **Construction Phase Iteration 1** |  | 36d | 2007-02-01 A | 2007-03-22 | 302 | 61% | 14.02d | 2007-02-01 | 2007-03-02 | 22d | 159d |  |  | 3576h | 2060h |
| 305 | 1.2.1.1 | Begin Iteration 1 | milestone | 0d | 2007-02-14 A | 2007-02-14 A | 302 | 100% |  | 2007-02-01 | 2007-02-01 | 0d |  | start no earlier than 2007-02-14 |  |  |  |
| 306 | 1.2.1.2 | **Iteration Planning** |  | 1d | 2007-02-14 A | 2007-02-14 A | 305 | 100% |  |  |  |  |  |  |  | 48h | 48h |
| 307 | 1.2.1.2.1 | Review and finalize Ucases and Work List for Iteration |  | 1d | 2007-02-14 A | 2007-02-14 A |  | 100% |  |  |  |  |  |  | Edmond; Ram; Vinay | 24h | 24h |
| 308 | 1.2.1.2.2 | Review and finalize assignments for Iteration |  | 1d | 2007-02-14 A | 2007-02-14 A |  | 100% |  |  |  |  |  |  | Edmond; Ram; Vinay | 24h | 24h |
| 309 | 1.2.1.3 | **Project Management** |  | 29d | 2007-02-01 A | 2007-03-13 |  | 95% | 1.45d |  |  |  | 166d |  |  | 128h | 120h |
| 310 | 1.2.1.3.1 | Update Project Plan |  | 3d | 2007-02-15 A | 2007-02-19 A | 308 | 100% |  |  |  |  |  |  | Edmond | 24h | 24h |
| 311 | 1.2.1.3.2 | **Weekly Team/Developers Meeting** |  | 16d | 2007-02-12 A | 2007-03-05 A |  | 100% |  |  |  |  |  |  |  | 32h | 32h |
| 312 | 1.2.1.3.2.1 | Weekly Team Meeting 1 |  | 1d | 2007-02-12 A | 2007-02-12 A |  | 100% |  |  |  |  |  | must start on 2007-02-12 | Edmond | 8h | 8h |
| 313 | 1.2.1.3.2.2 | Weekly Team Meeting 2 |  | 1d | 2007-02-19 A | 2007-02-19 A |  | 100% |  |  |  |  |  | must start on 2007-02-19 | Edmond | 8h | 8h |
| 314 | 1.2.1.3.2.3 | Weekly Team Meeting 3 |  | 1d | 2007-02-26 A | 2007-02-26 A |  | 100% |  |  |  |  |  | must start on 2007-02-26 | Edmond | 8h | 8h |
| 315 | 1.2.1.3.2.4 | Weekly Team Meeting 4 |  | 1d | 2007-03-05 A | 2007-03-05 A |  | 100% |  |  |  |  |  | must start on 2007-03-05 | Edmond | 8h | 8h |

| ID | WBS | Task | Type | Duration | Start | Finish | Predecessors | Complete | Remaining | Total slack | Constraint | Resources | Work | Actual work |
| --- | --- | --- | --- | --- | --- | --- | --- | --- | --- | --- | --- | --- | --- | --- |
| 316 | 1.2.1.3.3 | **Status and Risk Reporting** |  | 23d | 2007-02-09 A | 2007-03-13 |  | 89% | 2.56d | 166d |  |  | 72h | 64h |
| 317 | 1.2.1.3.3.1 | Bi-weekly Risk Update in caMP (Task 1.4) |  | 1d | 2007-02-09 A | 2007-02-09 A |  | 100% |  |  | must start on 2007-02-09 | Edmond | 8h | 8h |
| 318 | 1.2.1.3.3.2 | Bi-weekly Risk Matrix Update Meeting |  | 1d | 2007-02-09 A | 2007-02-09 A |  | 100% |  |  | must start on 2007-02-09 | Edmond | 8h | 8h |
| 319 | 1.2.1.3.3.3 | Bi-weekly Risk Update in caMP (Task 1.4) |  | 1d | 2007-02-23 A | 2007-02-23 A |  | 100% |  |  | start no earlier than 2007-02-23 | Edmond | 8h | 8h |
| 320 | 1.2.1.3.3.4 | Bi-weekly Risk Matrix Update Meeting |  | 1d | 2007-02-23 A | 2007-02-23 A |  | 100% |  |  | must start on 2007-02-23 | Edmond | 8h | 8h |
| 321 | 1.2.1.3.3.5 | Bi-weekly Status Update Meeting with BAH/NCI |  | 1d | 2007-02-16 A | 2007-02-16 A |  | 100% |  |  | must start on 2007-02-16 | Edmond | 8h | 8h |
| 322 | 1.2.1.3.3.6 | Bi-weekly Status Update Meeting with BAH/NCI |  | 1d | 2007-03-02 A | 2007-03-02 A |  | 100% |  |  | must start on 2007-03-02 | Edmond | 8h | 8h |
| 323 | 1.2.1.3.3.7 | Monthly Status Report (Task 1.3) |  | 1d | 2007-03-09 A | 2007-03-09 |  | 50% | 0.5d | 0d | must finish on 2007-03-09 | Edmond | 8h | 4h |
| 324 | 1.2.1.3.3.8 | Monthly Risk Matrix Update (Task 1.3) |  | 1d | 2007-03-12 A | 2007-03-12 A | 323 | 100% |  |  |  | Edmond | 8h | 8h |
| 325 | 1.2.1.3.3.9 | Adopters Collaboration Report (Task 1.7) |  | 1d | 2007-03-13 A | 2007-03-13 | 324 | 50% | 0.5d | 166d |  | Edmond | 8h | 4h |
| 326 | 1.2.1.3.4 | **Collaboration Management Activities** |  | 16d | 2007-02-01 A | 2007-02-22 A |  | 100% |  |  |  |  |  |  |
| 327 | 1.2.1.3.4.1 | Adopters Mtg |  | 1d | 2007-02-01 A | 2007-02-01 A |  | 100% |  |  | must start on 2007-02-01 |  |  |  |
| 328 | 1.2.1.3.4.2 | Bi-Weekly AE SIG Meeting |  | 1d | 2007-02-08 A | 2007-02-08 A |  | 100% |  |  | must start on 2007-02-08 |  |  |  |
| 329 | 1.2.1.3.4.3 | Adopters Mtg |  | 1d | 2007-02-15 A | 2007-02-15 A |  | 100% |  |  | must start on 2007-02-15 |  |  |  |
| 330 | 1.2.1.3.4.4 | Bi-Weekly AE SIG Meeting |  | 1d | 2007-02-22 A | 2007-02-22 A |  | 100% |  |  | must start on 2007-02-22 |  |  |  |
| 331 | 1.2.1.4 | **Environment** |  | 3d | 2007-02-08 A | 2007-02-12 A |  | 100% |  |  |  |  |  |  |
| 332 | 1.2.1.4.1 | Update Environment |  | 3d | 2007-02-08 A | 2007-02-12 A |  | 100% |  |  |  |  |  |  |
| 333 | 1.2.1.5 | **SCM** |  | 5d | 2007-02-08 A | 2007-02-14 A |  | 100% |  |  |  |  |  |  |
| 334 | 1.2.1.5.1 | Manage Repository |  | 5d | 2007-02-08 A | 2007-02-14 A |  | 100% |  |  |  |  |  |  |
| 335 | 1.2.1.6 | **Requirements** |  | 27d | 2007-02-14 A | 2007-03-22 |  | 44% | 15d | 159d |  |  | 808h | 448h |
| 336 | 1.2.1.6.1 | **Updated Use Case Specification and Realization** |  | 27d | 2007-02-14 A | 2007-03-22 |  | 44% | 15d | 159d |  |  | 256h | 136h |
| 337 | 1.2.1.6.1.1 | Developer draft |  | 5d | 2007-02-14 A | 2007-02-20 A | 305 | 100% |  |  |  | Sean | 40h | 40h |
| 338 | 1.2.1.6.1.2 | Adopters/Collobators Review |  | 5d | 2007-02-21 A | 2007-02-27 A | 337 | 100% |  |  |  | Mayo; WF | 80h | 80h |
| 339 | 1.2.1.6.1.3 | Update Use Case Document |  | 2d | 2007-02-28 A | 2007-03-01 A | 338 | 100% |  |  |  | Sean | 16h | 16h |
| 340 | 1.2.1.6.1.4 | Submit Updated Use Case Document to BAH (Task 3.1) | milestone | 0d | 2007-03-01 A | 2007-03-01 A | 339 | 100% |  |  |  | Edmond |  |  |
| 341 | 1.2.1.6.1.5 | Formal Review of Updated Use Case Document |  | 15d | 2007-03-02 | 2007-03-22 | 340 |  |  | 159d |  | BAH | 120h |  |

| ID | WBS | Task | Type | Duration | Start | Finish | Predecessors | Complete | Remaining | Total slack | Free slack | Resources | Work | Actual work |
| --- | --- | --- | --- | --- | --- | --- | --- | --- | --- | --- | --- | --- | --- | --- |
| 342 | 1.2.1.6.2 | **Updated SRS Document** |  | 27d | 2007-02-14 A | 2007-03-22 |  | 44% | 15d | 159d |  |  | 256h | 136h |
| 343 | 1.2.1.6.2.1 | Developer draft |  | 5d | 2007-02-14 A | 2007-02-20 A | 305 | 100% |  |  |  | Sean | 40h | 40h |
| 344 | 1.2.1.6.2.2 | Adopters/Collobators Review |  | 5d | 2007-02-21 A | 2007-02-27 A | 343 | 100% |  |  |  | Mayo; WF | 80h | 80h |
| 345 | 1.2.1.6.2.3 | Update SRS |  | 2d | 2007-02-28 A | 2007-03-01 A | 344 | 100% |  |  |  | Sean | 16h | 16h |
| 346 | 1.2.1.6.2.4 | Submit Updated SRS Document to BAH (Task 3.2) | milestone | 0d | 2007-03-01 A | 2007-03-01 A | 345 | 100% |  |  |  | Mayo; WF |  |  |
| 347 | 1.2.1.6.2.5 | Formal Review of Updated SRS |  | 15d | 2007-03-02 | 2007-03-22 | 346 |  |  | 159d |  | BAH | 120h |  |
| 348 | 1.2.1.6.3 | **Updated UML Static Class Diagram Model** |  | 27d | 2007-02-14 A | 2007-03-22 |  | 44% | 15d | 159d |  |  | 296h | 176h |
| 349 | 1.2.1.6.3.1 | Developer draft |  | 5d | 2007-02-14 A | 2007-02-20 A | 305 | 100% |  |  |  | Ram; Sean | 80h | 80h |
| 350 | 1.2.1.6.3.2 | Adopters/Collobators Review |  | 5d | 2007-02-21 A | 2007-02-27 A | 349 | 100% |  |  |  | Mayo; WF | 80h | 80h |
| 351 | 1.2.1.6.3.3 | Update UML |  | 2d | 2007-02-28 A | 2007-03-01 A | 350 | 100% |  |  |  | Sean | 16h | 16h |
| 352 | 1.2.1.6.3.4 | Submit UML to BAH (Task 3.3) | milestone | 0d | 2007-03-01 A | 2007-03-01 A | 351 | 100% |  |  |  | Edmond |  |  |
| 353 | 1.2.1.6.3.5 | Formal Review of UML |  | 15d | 2007-03-02 | 2007-03-22 | 352 |  |  | 159d |  | BAH | 120h |  |
| 354 | 1.2.1.7 | **Analysis and Design** |  | 30d | 2007-02-08 A | 2007-03-21 |  | 56% | 13.33d | 160d |  |  | 904h | 448h |
| 355 | 1.2.1.7.1 | **Design Documents** |  | 26d | 2007-02-08 A | 2007-03-15 |  | 63% | 9.61d | 164d |  |  | 408h | 312h |
| 356 | 1.2.1.7.1.1 | **Protocol Abstraction (Diseases/Agents)** |  | 12d | 2007-02-14 A | 2007-03-01 |  | 42% | 7d | 174d |  |  | 136h | 40h |
| 357 | 1.2.1.7.1.1.1 | Develop appropriate UML Artifacts |  | 2d | 2007-02-14 A | 2007-02-15 A | 305 | 100% |  |  |  | Krikor | 16h | 16h |
| 358 | 1.2.1.7.1.1.2 | Create Design Document |  | 3d | 2007-02-16 A | 2007-02-20 A | 357 | 100% |  |  |  | Krikor | 24h | 24h |
| 359 | 1.2.1.7.1.1.3 | Adopters/Collaborators Review |  | 5d | 2007-02-21 | 2007-02-27 | 358 |  |  | 174d | 0d | Mayo; WF | 80h |  |
| 360 | 1.2.1.7.1.1.4 | Developers Update |  | 2d | 2007-02-28 | 2007-03-01 | 359 |  |  | 174d |  | Krikor | 16h |  |
| 361 | 1.2.1.7.1.2 | **Protocol Abstration (Search/Edit Study)** |  | 12d | 2007-02-08 A | 2007-02-23 A |  | 100% |  |  |  |  | 136h | 136h |
| 362 | 1.2.1.7.1.2.1 | Develop appropriate UML Artifacts |  | 2d | 2007-02-08 A | 2007-02-09 A |  | 100% |  |  |  | Kulasekaran | 16h | 16h |
| 363 | 1.2.1.7.1.2.2 | Create Design Document |  | 3d | 2007-02-12 A | 2007-02-14 A | 362 | 100% |  |  |  | Kulasekaran | 24h | 24h |
| 364 | 1.2.1.7.1.2.3 | Adopters/Collaborators Review |  | 5d | 2007-02-15 A | 2007-02-21 A | 363 | 100% |  |  |  | Mayo; WF | 80h | 80h |
| 365 | 1.2.1.7.1.2.4 | Developers Update |  | 2d | 2007-02-22 A | 2007-02-23 A | 364 | 100% |  |  |  | Kulasekaran | 16h | 16h |

| ID | WBS | Task | Type | Duration | Start | Finish | Predecessors | Complete | Remaining | Baseline start | Baseline finish | Baseline duration | Total slack | Resources | Work | Actual work |
| --- | --- | --- | --- | --- | --- | --- | --- | --- | --- | --- | --- | --- | --- | --- | --- | --- |
| 366 | 1.2.1.7.1.3 | **Triggers/Notification (cont'd)** |  | 12d | 2007-02-08 A | 2007-02-23 A |  | 100% |  |  |  |  |  |  | 136h | 136h |
| 367 | 1.2.1.7.1.3.1 | Develop appropriate UML Artifacts |  | 2d | 2007-02-08 A | 2007-02-09 A |  | 100% |  |  |  |  |  | Sujith | 16h | 16h |
| 368 | 1.2.1.7.1.3.2 | Create Design Document |  | 3d | 2007-02-12 A | 2007-02-14 A | 367 | 100% |  |  |  |  |  | Sujith | 24h | 24h |
| 369 | 1.2.1.7.1.3.3 | Adopters/Collaborators Review |  | 5d | 2007-02-15 A | 2007-02-21 A | 368 | 100% |  |  |  |  |  | Mayo; WF | 80h | 80h |
| 370 | 1.2.1.7.1.3.4 | Developers Update |  | 2d | 2007-02-22 A | 2007-02-23 A | 369 | 100% |  |  |  |  |  | Sujith | 16h | 16h |
| 371 | 1.2.1.7.1.4 | Deliver Design document to BAH (Task 3.4) | milestone | 0d | 2007-03-01 A | 2007-03-01 A | 360, 365, 370 | 100% |  |  |  |  |  |  |  |  |
| 372 | 1.2.1.7.1.5 | Deliver UML to BAH (Task 3.3) | milestone | 0d | 2007-03-01 A | 2007-03-01 A | 360, 365, 370 | 100% |  |  |  |  |  |  |  |  |
| 373 | 1.2.1.7.1.6 | Formal Review by BAH |  | 10d | 2007-03-02 | 2007-03-15 | 372 |  |  |  |  |  | 156d |  |  |  |
| 374 | 1.2.1.7.2 | **Domain Model** |  | 5d | 2007-02-14 A | 2007-02-20 A |  | 100% |  |  |  |  |  |  | 40h | 40h |
| 375 | 1.2.1.7.2.1 | Update Model/BRIDG Harmonization |  | 5d | 2007-02-14 A | 2007-02-20 A | 305 | 100% |  |  |  |  |  | Ram | 40h | 40h |
| 376 | 1.2.1.7.3 | **Technical/Architecture Guide** |  | 21d | 2007-02-21 A | 2007-03-21 |  | 29% | 15d | 2007-01-12 | 2007-01-26 | 11d | 160d |  | 456h | 96h |
| 377 | 1.2.1.7.3.1 | Update Tech/Arch Guide |  | 6d | 2007-02-21 A | 2007-02-28 A | 305FS+5d | 100% |  | 2007-01-12 | 2007-01-18 | 5d |  | Vinay; Joshua | 96h | 96h |
| 378 | 1.2.1.7.3.2 | Deliver to BAH (Task 2.8) | milestone | 0d | 2007-02-28 A | 2007-02-28 A | 377 | 100% |  | 2007-01-26 | 2007-01-26 | 0d |  | Edmond |  |  |
| 379 | 1.2.1.7.3.3 | Formal Review |  | 15d | 2007-03-01 | 2007-03-21 | 378 |  |  |  |  |  | 160d | BAH; Mayo; WF | 360h |  |
| 380 | 1.2.1.8 | **Implementation** |  | 11d | 2007-02-14 A | 2007-02-28 A |  | 100% |  |  |  |  |  |  | 792h | 792h |
| 381 | 1.2.1.8.1 | **Infrastructure** |  | 10d | 2007-02-14 A | 2007-02-27 A |  | 100% |  |  |  |  |  |  | 280h | 280h |
| 382 | 1.2.1.8.1.1 | **Build Framework** |  | 5d | 2007-02-14 A | 2007-02-20 A |  | 100% |  |  |  |  |  |  | 40h | 40h |
| 383 | 1.2.1.8.1.1.1 | Maven Setup |  | 5d | 2007-02-14 A | 2007-02-20 A | 305 | 100% |  |  |  |  |  | Rhett | 40h | 40h |
| 384 | 1.2.1.8.1.2 | **Web interface** |  | 10d | 2007-02-14 A | 2007-02-27 A |  | 100% |  |  |  |  |  |  | 160h | 160h |
| 385 | 1.2.1.8.1.2.1 | UI Refactoring |  | 10d | 2007-02-14 A | 2007-02-27 A | 305 | 100% |  |  |  |  |  | Richard; Rhett | 160h | 160h |
| 386 | 1.2.1.8.1.3 | **Security** |  | 10d | 2007-02-14 A | 2007-02-27 A |  | 100% |  |  |  |  |  |  | 80h | 80h |
| 387 | 1.2.1.8.1.3.1 | Acegi - CSM |  | 10d | 2007-02-14 A | 2007-02-27 A | 305 | 100% |  |  |  |  |  | Joshua | 80h | 80h |
| 388 | 1.2.1.8.2 | **Implement Use Cases** |  | 11d | 2007-02-14 A | 2007-02-28 A |  | 100% |  |  |  |  |  |  | 512h | 512h |
| 389 | 1.2.1.8.2.1 | **Protocol Abstraction (Agents)** |  | 11d | 2007-02-14 A | 2007-02-28 A |  | 100% |  |  |  |  |  |  | 216h | 216h |
| 390 | 1.2.1.8.2.1.1 | Implement O/R mapping |  | 5d | 2007-02-14 A | 2007-02-20 A | 305 | 100% |  |  |  |  |  | Krikor | 40h | 40h |
| 391 | 1.2.1.8.2.1.2 | Develop DAO |  | 7d | 2007-02-16 A | 2007-02-26 A | 390SS+2d | 100% |  |  |  |  |  | Krikor | 56h | 56h |
| 392 | 1.2.1.8.2.1.3 | Develop Service |  | 7d | 2007-02-20 A | 2007-02-28 A | 391SS+2d | 100% |  |  |  |  |  | Krikor | 56h | 56h |
| 393 | 1.2.1.8.2.1.4 | Develop controller and command objects |  | 5d | 2007-02-22 A | 2007-02-28 A | 392SS+2d | 100% |  |  |  |  |  | Krikor | 40h | 40h |
| 394 | 1.2.1.8.2.1.5 | Develop JUnit test cases |  | 3d | 2007-02-26 A | 2007-02-28 A | 393SS+2d | 100% |  |  |  |  |  | Krikor | 24h | 24h |

| ID | WBS | Task | Type | Duration | Start | Finish | Predecessors | Complete | Remaining | Baseline start | Baseline finish | Baseline duration | Total slack | Free slack | Constraint | Resources | Work | Actual work |
| --- | --- | --- | --- | --- | --- | --- | --- | --- | --- | --- | --- | --- | --- | --- | --- | --- | --- | --- |
| 395 | 1.2.1.8.2.2 | **Protocol Abstraction (Search/Edit Study)** |  | 11d | 2007-02-14 A | 2007-02-28 A |  | 100% |  |  |  |  |  |  |  |  | 216h | 216h |
| 396 | 1.2.1.8.2.2.1 | Implement O/R mapping |  | 5d | 2007-02-14 A | 2007-02-20 A | 305 | 100% |  |  |  |  |  |  |  | Kulasekaran | 40h | 40h |
| 397 | 1.2.1.8.2.2.2 | Develop DAO |  | 7d | 2007-02-16 A | 2007-02-26 A | 396SS+2d | 100% |  |  |  |  |  |  |  | Kulasekaran | 56h | 56h |
| 398 | 1.2.1.8.2.2.3 | Develop Service |  | 7d | 2007-02-20 A | 2007-02-28 A | 397SS+2d | 100% |  |  |  |  |  |  |  | Kulasekaran | 56h | 56h |
| 399 | 1.2.1.8.2.2.4 | Develop controller and command objects |  | 5d | 2007-02-22 A | 2007-02-28 A | 398SS+2d | 100% |  |  |  |  |  |  |  | Kulasekaran | 40h | 40h |
| 400 | 1.2.1.8.2.2.5 | Develop JUnit test cases |  | 3d | 2007-02-26 A | 2007-02-28 A | 399SS+2d | 100% |  |  |  |  |  |  |  | Kulasekaran | 24h | 24h |
| 401 | 1.2.1.8.2.3 | **Triggers/Notification (cont'd)** |  | 10d | 2007-02-14 A | 2007-02-27 A |  | 100% |  |  |  |  |  |  |  |  | 80h | 80h |
| 402 | 1.2.1.8.2.3.1 | Rules Engine Development |  | 10d | 2007-02-14 A | 2007-02-27 A | 305 | 100% |  |  |  |  |  |  |  | Sujith | 80h | 80h |
| 403 | 1.2.1.9 | **Testing** |  | 26d | 2007-02-14 A | 2007-03-21 |  | 22% | 20.17d |  |  |  | 160d |  |  |  | 752h | 152h |
| 404 | 1.2.1.9.1 | **Test Plan** |  | 20d | 2007-02-14 A | 2007-03-13 |  | 50% | 10d |  |  |  | 166d |  |  |  | 160h | 80h |
| 405 | 1.2.1.9.1.1 | Update Test Plan Document (Task 3.6) |  | 10d | 2007-02-14 A | 2007-02-27 A | 305 | 100% |  |  |  |  |  |  |  | Ram | 80h | 80h |
| 406 | 1.2.1.9.1.2 | Submit to BAH | milestone | 0d | 2007-02-27 | 2007-02-27 | 405 |  |  |  |  |  | 166d | 0d |  | Edmond |  |  |
| 407 | 1.2.1.9.1.3 | Formal Review by BAH |  | 10d | 2007-02-28 | 2007-03-13 | 406 |  |  |  |  |  | 166d |  |  | BAH | 80h |  |
| 408 | 1.2.1.9.2 | **Test Data** |  | 20d | 2007-02-14 | 2007-03-13 |  |  |  |  |  |  | 166d |  |  |  | 400h |  |
| 409 | 1.2.1.9.2.1 | Create test data set (Task 3.7) |  | 10d | 2007-02-14 | 2007-02-27 | 305 |  |  |  |  |  | 166d | 0d |  | Renee; David | 160h |  |
| 410 | 1.2.1.9.2.2 | Submit for Review | milestone | 0d | 2007-02-27 | 2007-02-27 | 409 |  |  |  |  |  | 166d | 0d |  | Edmond |  |  |
| 411 | 1.2.1.9.2.3 | Review |  | 10d | 2007-02-28 | 2007-03-13 | 410 |  |  |  |  |  | 166d |  |  | BAH; Mayo; WF | 240h |  |
| 412 | 1.2.1.9.3 | **Testing** |  | 18d | 2007-02-26 A | 2007-03-21 |  | 17% | 15d |  |  |  | 160d |  |  |  | 192h | 72h |
| 413 | 1.2.1.9.3.1 | Testing |  | 3d | 2007-02-26 A | 2007-02-28 A |  | 100% |  |  |  |  |  |  | must start on 2007-02-26 | Renee; David; Natasha | 72h | 72h |
| 414 | 1.2.1.9.3.2 | Submit Test Results Report (Task 3.7) | milestone | 0d | 2007-02-28 A | 2007-02-28 A | 413 | 100% |  |  |  |  |  |  |  | Edmond |  |  |
| 415 | 1.2.1.9.3.3 | Formal Review of Test results Report |  | 15d | 2007-03-01 | 2007-03-21 | 414 |  |  |  |  |  | 160d |  |  | BAH | 120h |  |
| 416 | 1.2.1.10 | **Deployment** |  | 10d | 2007-02-28 A | 2007-03-14 |  | 21% | 7.86d |  |  |  | 165d |  |  |  | 144h | 52h |
| 417 | 1.2.1.10.1 | Submit prototype code (Task 3.5) | milestone | 0d | 2007-02-28 A | 2007-02-28 A | 413 | 100% |  |  |  |  |  |  |  | Ram |  |  |
| 418 | 1.2.1.10.2 | Formal Review of Code by BAH |  | 10d | 2007-03-01 | 2007-03-14 | 417 |  |  |  |  |  | 165d |  |  | BAH | 80h |  |
| 419 | 1.2.1.10.3 | Update Installation Guide |  | 2d | 2007-03-01 A | 2007-03-02 A | 380 | 100% |  |  |  |  |  |  |  | Krikor; Vinay | 32h | 32h |
| 420 | 1.2.1.10.4 | Deploy Prototype for Iteration 1 at Mayo and WF |  | 1d | 2007-03-05 A | 2007-03-05 | 413, 419 | 75% | 0.25d |  |  |  | 172d |  |  | Vinay; Mayo; WF | 24h | 18h |
| 421 | 1.2.1.10.5 | Make URL Public |  | 1d | 2007-03-01 A | 2007-03-01 | 413 | 25% | 0.75d |  |  |  | 174d |  |  | Vinay | 8h | 2h |
| 422 | 1.2.1.11 | Finish Iteration 1 | milestone | 0d | 2007-02-28 A | 2007-02-28 | 417 | 75% | 0d | 2007-02-28 | 2007-02-28 | 0d | -18d | 0d |  |  |  |  |

| ID | WBS | Task | Type | Duration | Start | Finish | Predecessors | Complete | Remaining | Baseline start | Baseline finish | Baseline duration | Total slack | Constraint | Resources | Work | Actual work |
| --- | --- | --- | --- | --- | --- | --- | --- | --- | --- | --- | --- | --- | --- | --- | --- | --- | --- |
| 423 | 1.2.2 | **Construction Phase Iteration 2** |  | 42d | 2007-03-01 A | 2007-04-27 | 422 |  | 41.83d | 2007-03-02 | 2007-04-04 | 23d | 133d |  |  | 5296h | 48h |
| 424 | 1.2.2.1 | Begin Iteration 2 | milestone | 0d | 2007-03-01 A | 2007-03-01 A | 422 | 100% |  | 2007-03-02 | 2007-03-02 | 0d |  | start no earlier than 2007-03-01 |  |  |  |
| 425 | 1.2.2.2 | **Iteration Planning** |  | 2d | 2007-03-01 A | 2007-03-02 A |  | 100% |  |  |  |  |  |  |  | 48h | 48h |
| 426 | 1.2.2.2.1 | Review and finalize Ucases and Work List for Iteration |  | 1d | 2007-03-01 A | 2007-03-01 A | 424 | 100% |  |  |  |  |  |  | Edmond; Ram; Vinay | 24h | 24h |
| 427 | 1.2.2.2.2 | Review and finalize assignments for Iteration |  | 1d | 2007-03-02 A | 2007-03-02 A | 426 | 100% |  |  |  |  |  |  | Edmond; Ram; Vinay | 24h | 24h |
| 428 | 1.2.2.3 | **Project Management** |  | 22d | 2007-03-01 | 2007-03-31 |  |  |  |  |  |  | 0d |  |  | 160h |  |
| 429 | 1.2.2.3.1 | Update Project Plan |  | 3d | 2007-03-05 | 2007-03-07 | 427 |  |  |  |  |  | 170d |  | Edmond | 24h |  |
| 430 | 1.2.2.3.2 | **CaAERS CCB (Task 2.10)** |  | 1d | 2007-03-12 | 2007-03-12 |  |  |  |  |  |  | 167d |  |  | 8h |  |
| 431 | 1.2.2.3.2.1 | CCB Meeting |  | 1d | 2007-03-12 | 2007-03-12 |  |  |  |  |  |  | 167d | start no earlier than 2007-03-12 | Edmond | 8h |  |
| 432 | 1.2.2.3.3 | **Weekly Team/Developers Meeting** |  | 16d | 2007-03-05 | 2007-03-26 |  |  |  |  |  |  | 0d |  |  | 32h |  |
| 433 | 1.2.2.3.3.1 | Weekly Team Meeting 1 |  | 1d | 2007-03-05 | 2007-03-05 |  |  |  |  |  |  | 0d | must start on 2007-03-05 | Edmond | 8h |  |
| 434 | 1.2.2.3.3.2 | Weekly Team Meeting 2 |  | 1d | 2007-03-12 | 2007-03-12 |  |  |  |  |  |  | 0d | must start on 2007-03-12 | Edmond | 8h |  |
| 435 | 1.2.2.3.3.3 | Weekly Team Meeting 3 |  | 1d | 2007-03-19 | 2007-03-19 |  |  |  |  |  |  | 0d | must start on 2007-03-19 | Edmond | 8h |  |
| 436 | 1.2.2.3.3.4 | Weekly Team Meeting 4 |  | 1d | 2007-03-26 | 2007-03-26 |  |  |  |  |  |  | 0d | must start on 2007-03-26 | Edmond | 8h |  |
| 437 | 1.2.2.3.4 | **Status and Risk Reporting** |  | 21d | 2007-03-02 | 2007-03-31 |  |  |  |  |  |  | 0d |  |  | 64h |  |
| 438 | 1.2.2.3.4.1 | Bi-weekly Risk Update in caMP (Task 1.4) |  | 1d | 2007-03-02 | 2007-03-02 |  |  |  |  |  |  | 0d | must start on 2007-03-02 | Edmond | 8h |  |
| 439 | 1.2.2.3.4.2 | Bi-weekly Risk Matrix Update Meeting |  | 1d | 2007-03-02 | 2007-03-02 |  |  |  |  |  |  | 0d | must start on 2007-03-02 | Edmond | 8h |  |
| 440 | 1.2.2.3.4.3 | Bi-weekly Risk Update in caMP (Task 1.4) |  | 1d | 2007-03-16 | 2007-03-16 |  |  |  |  |  |  | 163d | start no earlier than 2007-03-16 | Edmond | 8h |  |
| 441 | 1.2.2.3.4.4 | Bi-weekly Risk Matrix Update Meeting |  | 1d | 2007-03-16 | 2007-03-16 |  |  |  |  |  |  | 0d | must start on 2007-03-16 | Edmond | 8h |  |
| 442 | 1.2.2.3.4.5 | Bi-weekly Status Update Meeting with BAH/NCI |  | 1d | 2007-03-09 | 2007-03-09 |  |  |  |  |  |  | 0d | must start on 2007-03-09 | Edmond | 8h |  |
| 443 | 1.2.2.3.4.6 | Bi-weekly Status Update Meeting with BAH/NCI |  | 1d | 2007-03-23 | 2007-03-23 |  |  |  |  |  |  | 0d | must start on 2007-03-23 | Edmond | 8h |  |
| 444 | 1.2.2.3.4.7 | Monthly Status Report (Task 1.3) |  | 1d | 2007-03-30 | 2007-03-31 |  |  |  |  |  |  | 0d | must finish on 2007-03-31 | Edmond | 8h |  |
| 445 | 1.2.2.3.4.8 | Monthly Risk Matrix Update (Task 1.3) |  | 1d | 2007-03-30 | 2007-03-30 | 444SS |  |  |  |  |  | 153d |  | Edmond | 8h |  |
| 446 | 1.2.2.3.5 | **Collaboration Management Activities** |  | 16d | 2007-03-01 | 2007-03-22 |  |  |  |  |  |  | 0d |  |  | 32h |  |
| 447 | 1.2.2.3.5.1 | Adopters Mtg |  | 1d | 2007-03-01 | 2007-03-01 |  |  |  |  |  |  | 0d | must start on 2007-03-01 | Edmond | 8h |  |
| 448 | 1.2.2.3.5.2 | Bi-Weekly AE SIG Meeting |  | 1d | 2007-03-08 | 2007-03-08 |  |  |  |  |  |  | 0d | must start on 2007-03-08 | Edmond | 8h |  |
| 449 | 1.2.2.3.5.3 | Adopters Mtg |  | 1d | 2007-03-15 | 2007-03-15 |  |  |  |  |  |  | 0d | must start on 2007-03-15 | Edmond | 8h |  |
| 450 | 1.2.2.3.5.4 | Bi-Weekly AE SIG Meeting |  | 1d | 2007-03-22 | 2007-03-22 |  |  |  |  |  |  | 0d | must start on 2007-03-22 | Edmond | 8h |  |

| ID | WBS | Task | Type | Duration | Start | Finish | Predecessors | Total slack | Free slack | Resources | Work |
| --- | --- | --- | --- | --- | --- | --- | --- | --- | --- | --- | --- |
| 451 | 1.2.2.4 | **Environment** |  | 3d | 2007-03-01 | 2007-03-05 |  | 172d |  |  | 24h |
| 452 | 1.2.2.4.1 | Update Environment |  | 3d | 2007-03-01 | 2007-03-05 | 422 | 172d |  | Vinay | 24h |
| 453 | 1.2.2.5 | **SCM** |  | 5d | 2007-03-01 | 2007-03-07 |  | 170d |  |  | 40h |
| 454 | 1.2.2.5.1 | Manage Repository |  | 5d | 2007-03-01 | 2007-03-07 | 422 | 170d |  | Rhett | 40h |
| 455 | 1.2.2.6 | **Requirements** |  | 30d | 2007-03-01 | 2007-04-11 |  | 145d |  |  | 824h |
| 456 | 1.2.2.6.1 | **Updated Use Case Specification and Realization** |  | 28d | 2007-03-01 | 2007-04-09 |  | 147d |  |  | 264h |
| 457 | 1.2.2.6.1.1 | Developer draft |  | 5d | 2007-03-01 | 2007-03-07 | 422 | 147d | 0d | Sean | 40h |
| 458 | 1.2.2.6.1.2 | Adopters/Collobators Review |  | 5d | 2007-03-08 | 2007-03-14 | 457 | 147d | 0d | Mayo; WF | 80h |
| 459 | 1.2.2.6.1.3 | Update Use Case Document |  | 3d | 2007-03-15 | 2007-03-19 | 458 | 147d | 0d | Sean | 24h |
| 460 | 1.2.2.6.1.4 | Submit Updated Use Case Document to BAH (Task 3.1) | milestone | 0d | 2007-03-19 | 2007-03-19 | 459 | 147d | 0d | Edmond |  |
| 461 | 1.2.2.6.1.5 | Formal Review of Updated Use Case Document |  | 15d | 2007-03-20 | 2007-04-09 | 460 | 147d |  | BAH | 120h |
| 462 | 1.2.2.6.2 | **Updated SRS Document** |  | 28d | 2007-03-05 | 2007-04-11 |  | 145d |  |  | 264h |
| 463 | 1.2.2.6.2.1 | Developer draft |  | 5d | 2007-03-05 | 2007-03-09 | 427 | 145d | 0d | Sean | 40h |
| 464 | 1.2.2.6.2.2 | Adopters/Collobators Review |  | 5d | 2007-03-12 | 2007-03-16 | 463 | 145d | 0d | Mayo; WF | 80h |
| 465 | 1.2.2.6.2.3 | Update SRS |  | 3d | 2007-03-19 | 2007-03-21 | 464 | 145d | 0d | Sean | 24h |
| 466 | 1.2.2.6.2.4 | Submit Updated SRS Document to BAH (Task 3.2) | milestone | 0d | 2007-03-21 | 2007-03-21 | 465 | 145d | 0d | Mayo; WF |  |
| 467 | 1.2.2.6.2.5 | Formal Review of Updated SRS |  | 15d | 2007-03-22 | 2007-04-11 | 466 | 145d |  | BAH | 120h |
| 468 | 1.2.2.6.3 | **Updated UML Static Class Diagram Model** |  | 27d | 2007-03-05 | 2007-04-10 |  | 146d |  |  | 296h |
| 469 | 1.2.2.6.3.1 | Developer draft |  | 5d | 2007-03-05 | 2007-03-09 | 427 | 146d | 0d | Ram; Sean | 80h |
| 470 | 1.2.2.6.3.2 | Adopters/Collobators Review |  | 5d | 2007-03-12 | 2007-03-16 | 469 | 146d | 0d | Mayo; WF | 80h |
| 471 | 1.2.2.6.3.3 | Update UML |  | 2d | 2007-03-19 | 2007-03-20 | 470 | 146d | 0d | Sean | 16h |
| 472 | 1.2.2.6.3.4 | Submit UML to BAH (Task 3.3) | milestone | 0d | 2007-03-20 | 2007-03-20 | 471 | 146d | 0d | Edmond |  |
| 473 | 1.2.2.6.3.5 | Formal Review of UML |  | 15d | 2007-03-21 | 2007-04-10 | 472 | 146d |  | BAH | 120h |
| 474 | 1.2.2.7 | **Analysis and Design** |  | 29d | 2007-03-01 | 2007-04-10 |  | 146d |  |  | 1232h |
| 475 | 1.2.2.7.1 | **Design Documents** |  | 29d | 2007-03-01 | 2007-04-10 |  | 146d |  |  | 752h |
| 476 | 1.2.2.7.1.1 | **Protocol Abstraction (Diseases)** |  | 11d | 2007-03-05 | 2007-03-19 |  | 152d |  |  | 128h |
| 477 | 1.2.2.7.1.1.1 | Develop appropriate UML Artifacts |  | 2d | 2007-03-05 | 2007-03-06 | 427 | 152d | 0d | Krikor | 16h |
| 478 | 1.2.2.7.1.1.2 | Create Design Document |  | 2d | 2007-03-07 | 2007-03-08 | 477 | 152d | 0d | Krikor | 16h |
| 479 | 1.2.2.7.1.1.3 | Adopters/Collaborators Review |  | 5d | 2007-03-09 | 2007-03-15 | 478 | 152d | 0d | Mayo; WF | 80h |
| 480 | 1.2.2.7.1.1.4 | Developers Update |  | 2d | 2007-03-16 | 2007-03-19 | 479 | 152d | 6d | Krikor | 16h |

| ID | WBS | Task | Type | Duration | Start | Finish | Predecessors | Total slack | Free slack | Resources | Work |
| --- | --- | --- | --- | --- | --- | --- | --- | --- | --- | --- | --- |
| 481 | 1.2.2.7.1.2 | **Data Exchange with Local CTMS (Import)** |  | 10d | 2007-03-05 | 2007-03-16 |  | 163d |  |  | 120h |
| 482 | 1.2.2.7.1.2.1 | Develop appropriate UML Artifacts |  | 1d | 2007-03-05 | 2007-03-05 | 427 | 163d | 0d | Krikor | 8h |
| 483 | 1.2.2.7.1.2.2 | Create Design Document |  | 2d | 2007-03-06 | 2007-03-07 | 482 | 163d | 0d | Krikor | 16h |
| 484 | 1.2.2.7.1.2.3 | Adopters/Collaborators Review |  | 5d | 2007-03-08 | 2007-03-14 | 483 | 163d | 0d | Mayo; WF | 80h |
| 485 | 1.2.2.7.1.2.4 | Developers Update |  | 2d | 2007-03-15 | 2007-03-16 | 484 | 163d |  | Krikor | 16h |
| 486 | 1.2.2.7.1.3 | **AE Data Collection (AE Attribution Related Functionality)** |  | 17d | 2007-03-05 | 2007-03-27 |  | 146d |  |  | 176h |
| 487 | 1.2.2.7.1.3.1 | Develop appropriate UML Artifacts |  | 5d | 2007-03-05 | 2007-03-09 | 427 | 146d | 0d | Rhett | 40h |
| 488 | 1.2.2.7.1.3.2 | Create Design Document |  | 5d | 2007-03-12 | 2007-03-16 | 487 | 146d | 0d | Rhett | 40h |
| 489 | 1.2.2.7.1.3.3 | Adopters/Collaborators Review |  | 5d | 2007-03-19 | 2007-03-23 | 488 | 146d | 0d | Mayo; WF | 80h |
| 490 | 1.2.2.7.1.3.4 | Developers Update |  | 2d | 2007-03-26 | 2007-03-27 | 489 | 146d | 0d | Rhett | 16h |
| 491 | 1.2.2.7.1.4 | **Protocol Abstraction (Committees, Orgs, Instit., Study Personnel)** |  | 14d | 2007-03-05 | 2007-03-22 |  | 149d |  |  | 152h |
| 492 | 1.2.2.7.1.4.1 | Develop appropriate UML Artifacts |  | 3d | 2007-03-05 | 2007-03-07 | 427 | 149d | 0d | Kulasekeran | 24h |
| 493 | 1.2.2.7.1.4.2 | Create Design Document |  | 3d | 2007-03-08 | 2007-03-12 | 492 | 149d | 0d | Kulasekeran | 24h |
| 494 | 1.2.2.7.1.4.3 | Adopters/Collaborators Review |  | 5d | 2007-03-13 | 2007-03-19 | 493 | 149d | 0d | Mayo; WF | 80h |
| 495 | 1.2.2.7.1.4.4 | Developers Update |  | 3d | 2007-03-20 | 2007-03-22 | 494 | 149d | 3d | Kulasekeran | 24h |
| 496 | 1.2.2.7.1.5 | **Protocol Level AE Notification Trigger** |  | 17d | 2007-03-01 | 2007-03-23 |  | 148d |  |  | 176h |
| 497 | 1.2.2.7.1.5.1 | Develop appropriate UML Artifacts |  | 5d | 2007-03-01 | 2007-03-07 |  | 148d | 0d | Sujith | 40h |
| 498 | 1.2.2.7.1.5.2 | Create Design Document |  | 5d | 2007-03-08 | 2007-03-14 | 497 | 148d | 0d | Sujith | 40h |
| 499 | 1.2.2.7.1.5.3 | Adopters/Collaborators Review |  | 5d | 2007-03-15 | 2007-03-21 | 498 | 148d | 0d | Mayo; WF | 80h |
| 500 | 1.2.2.7.1.5.4 | Developers Update |  | 2d | 2007-03-22 | 2007-03-23 | 499 | 148d | 2d | Sujith | 16h |
| 501 | 1.2.2.7.1.6 | Deliver Design document to BAH (Task 3.4) | milestone | 0d | 2007-03-27 | 2007-03-27 | 480, 490, 500, 495 | 156d |  |  |  |
| 502 | 1.2.2.7.1.7 | Deliver UML to BAH (Task 3.3) | milestone | 0d | 2007-03-27 | 2007-03-27 | 480, 490, 500, 495 | 146d | 0d |  |  |
| 503 | 1.2.2.7.1.8 | Formal Review by BAH |  | 10d | 2007-03-28 | 2007-04-10 | 502 | 146d |  |  |  |
| 504 | 1.2.2.7.2 | **Domain Model** |  | 5d | 2007-03-05 | 2007-03-09 |  | 168d |  |  | 40h |
| 505 | 1.2.2.7.2.1 | Update Model/BRIDG Harmonization |  | 5d | 2007-03-05 | 2007-03-09 | 427 | 168d |  | Ram | 40h |

| ID | WBS | Task | Type | Duration | Start | Finish | Predecessors | Baseline start | Baseline finish | Baseline duration | Total slack | Free slack | Resources | Work |
| --- | --- | --- | --- | --- | --- | --- | --- | --- | --- | --- | --- | --- | --- | --- |
| 506 | 1.2.2.7.3 | **Technical/Architecture Guide** |  | 20d | 2007-03-05 | 2007-03-30 |  | 2007-01-12 | 2007-01-26 | 11d | 153d |  |  | 440h |
| 507 | 1.2.2.7.3.1 | Update Tech/Arch Guide |  | 5d | 2007-03-05 | 2007-03-09 | 427 | 2007-01-12 | 2007-01-18 | 5d | 153d | 0d | Vinay; Joshua | 80h |
| 508 | 1.2.2.7.3.2 | Deliver to BAH (Task 2.8) | milestone | 0d | 2007-03-09 | 2007-03-09 | 507 | 2007-01-26 | 2007-01-26 | 0d | 153d | 0d | Edmond |  |
| 509 | 1.2.2.7.3.3 | Formal Review |  | 15d | 2007-03-12 | 2007-03-30 | 508 |  |  |  | 153d |  | BAH; Mayo; WF | 360h |
| 510 | 1.2.2.8 | **Implementation** |  | 22d | 2007-03-01 | 2007-03-30 |  |  |  |  | -18d | 0d |  | 1704h |
| 511 | 1.2.2.8.1 | **Web interface** |  | 10d | 2007-03-05 | 2007-03-16 |  |  |  |  | -8d | 0d |  | 80h |
| 512 | 1.2.2.8.1.1 | UI Refinement |  | 10d | 2007-03-05 | 2007-03-16 | 427 |  |  |  | -8d | 0d | Richard | 80h |
| 513 | 1.2.2.8.2 | **Implement Use Cases** |  | 22d | 2007-03-01 | 2007-03-30 |  |  |  |  | -18d | 0d |  | 1624h |
| 514 | 1.2.2.8.2.1 | **Protocol Abstraction (Diseases)** |  | 11d | 2007-03-01 | 2007-03-15 |  |  |  |  | -18d | 0d |  | 120h |
| 515 | 1.2.2.8.2.1.1 | Implement O/R mapping |  | 3d | 2007-03-01 | 2007-03-05 |  |  |  |  | -18d | 0d | Krikor | 24h |
| 516 | 1.2.2.8.2.1.2 | Develop DAO |  | 3d | 2007-03-05 | 2007-03-07 | 515SS+2d |  |  |  | -18d | 0d | Krikor | 24h |
| 517 | 1.2.2.8.2.1.3 | Develop Service |  | 3d | 2007-03-07 | 2007-03-09 | 516SS+2d |  |  |  | -18d | 0d | Krikor | 24h |
| 518 | 1.2.2.8.2.1.4 | Develop controller and command objects |  | 3d | 2007-03-09 | 2007-03-13 | 517SS+2d |  |  |  | -18d | 0d | Krikor | 24h |
| 519 | 1.2.2.8.2.1.5 | Develop JUnit test cases |  | 3d | 2007-03-13 | 2007-03-15 | 518SS+2d |  |  |  | -18d | 0d | Krikor | 24h |
| 520 | 1.2.2.8.2.2 | **Data Exchange with Local CTMS (Import)** |  | 11d | 2007-03-16 | 2007-03-30 |  |  |  |  | -18d | 0d |  | 176h |
| 521 | 1.2.2.8.2.2.1 | Implement O/R mapping |  | 5d | 2007-03-16 | 2007-03-22 | 519 |  |  |  | -18d | 0d | Krikor | 40h |
| 522 | 1.2.2.8.2.2.2 | Develop DAO |  | 5d | 2007-03-20 | 2007-03-26 | 521SS+2d |  |  |  | -18d | 0d | Krikor | 40h |
| 523 | 1.2.2.8.2.2.3 | Develop Service |  | 5d | 2007-03-22 | 2007-03-28 | 522SS+2d |  |  |  | -18d | 0d | Krikor | 40h |
| 524 | 1.2.2.8.2.2.4 | Develop controller and command objects |  | 4d | 2007-03-26 | 2007-03-29 | 523SS+2d |  |  |  | -18d | 0d | Krikor | 32h |
| 525 | 1.2.2.8.2.2.5 | Develop JUnit test cases |  | 3d | 2007-03-28 | 2007-03-30 | 524SS+2d |  |  |  | -18d | 0d | Krikor | 24h |
| 526 | 1.2.2.8.2.3 | **AE Data Collection (cont'd)** |  | 16d | 2007-03-05 | 2007-03-26 |  |  |  |  | -14d | 0d |  | 336h |
| 527 | 1.2.2.8.2.3.1 | Implement O/R mapping |  | 5d | 2007-03-05 | 2007-03-09 | 427 |  |  |  | -14d | 0d | Rhett | 40h |
| 528 | 1.2.2.8.2.3.2 | Develop DAO |  | 10d | 2007-03-07 | 2007-03-20 | 527SS+2d |  |  |  | -14d | 0d | Rhett | 80h |
| 529 | 1.2.2.8.2.3.3 | Develop Service |  | 10d | 2007-03-09 | 2007-03-22 | 528SS+2d |  |  |  | -14d | 0d | Rhett | 80h |
| 530 | 1.2.2.8.2.3.4 | Develop controller and command objects |  | 10d | 2007-03-13 | 2007-03-26 | 529SS+2d |  |  |  | -14d | 0d | Rhett | 80h |
| 531 | 1.2.2.8.2.3.5 | Develop JUnit test cases |  | 7d | 2007-03-15 | 2007-03-23 | 530SS+2d |  |  |  | -13d | 0d | Rhett | 56h |

| ID | WBS | Task | Type | Duration | Start | Finish | Predecessors | Total slack | Free slack | Resources | Work |
| --- | --- | --- | --- | --- | --- | --- | --- | --- | --- | --- | --- |
| 532 | 1.2.2.8.2.4 | **Protocol Abstraction (Committees, Orgs, Instit., Study Personnel)** |  | 16d | 2007-03-05 | 2007-03-26 |  | -14d | 0d |  | 336h |
| 533 | 1.2.2.8.2.4.1 | Implement O/R mapping |  | 5d | 2007-03-05 | 2007-03-09 | 427 | -14d | 0d | Kulasekaran | 40h |
| 534 | 1.2.2.8.2.4.2 | Develop DAO |  | 10d | 2007-03-07 | 2007-03-20 | 533SS+2d | -14d | 0d | Kulasekaran | 80h |
| 535 | 1.2.2.8.2.4.3 | Develop Service |  | 10d | 2007-03-09 | 2007-03-22 | 534SS+2d | -14d | 0d | Kulasekaran | 80h |
| 536 | 1.2.2.8.2.4.4 | Develop controller and command objects |  | 10d | 2007-03-13 | 2007-03-26 | 535SS+2d | -14d | 0d | Kulasekaran | 80h |
| 537 | 1.2.2.8.2.4.5 | Develop JUnit test cases |  | 7d | 2007-03-15 | 2007-03-23 | 536SS+2d | -13d | 0d | Kulasekaran | 56h |
| 538 | 1.2.2.8.2.5 | **Protocol Level Triggers/Notification (cont'd)** |  | 16d | 2007-03-05 | 2007-03-26 |  | -14d | 0d |  | 336h |
| 539 | 1.2.2.8.2.5.1 | Implement O/R mapping |  | 5d | 2007-03-05 | 2007-03-09 | 427 | -14d | 0d | Sujith | 40h |
| 540 | 1.2.2.8.2.5.2 | Develop DAO |  | 10d | 2007-03-07 | 2007-03-20 | 539SS+2d | -14d | 0d | Sujith | 80h |
| 541 | 1.2.2.8.2.5.3 | Develop Service |  | 10d | 2007-03-09 | 2007-03-22 | 540SS+2d | -14d | 0d | Sujith | 80h |
| 542 | 1.2.2.8.2.5.4 | Develop controller and command objects |  | 10d | 2007-03-13 | 2007-03-26 | 541SS+2d | -14d | 0d | Sujith | 80h |
| 543 | 1.2.2.8.2.5.5 | Develop JUnit test cases |  | 7d | 2007-03-15 | 2007-03-23 | 542SS+2d | -13d | 0d | Sujith | 56h |
| 544 | 1.2.2.8.2.6 | **Role Based Authorization** |  | 20d | 2007-03-05 | 2007-03-30 |  | -18d | 0d |  | 320h |
| 545 | 1.2.2.8.2.6.1 | Finish Acegi-CSM Tasks |  | 10d | 2007-03-05 | 2007-03-16 | 427 | -18d | 0d | Joshua; Vinay | 160h |
| 546 | 1.2.2.8.2.6.2 | Implement Study Participant Login/Authorization |  | 5d | 2007-03-19 | 2007-03-23 | 545 | -18d | 0d | Joshua; Vinay | 80h |
| 547 | 1.2.2.8.2.6.3 | Implement Study Coordinator Login/Authorization |  | 5d | 2007-03-26 | 2007-03-30 | 546 | -18d | 0d | Joshua; Vinay | 80h |
| 548 | 1.2.2.9 | **Testing** |  | 42d | 2007-03-01 | 2007-04-27 |  | 4d |  |  | 1120h |
| 549 | 1.2.2.9.1 | **Test Plan** |  | 20d | 2007-03-01 | 2007-03-28 |  | 155d |  |  | 160h |
| 550 | 1.2.2.9.1.1 | Update Test Plan Document (Task 3.6) |  | 10d | 2007-03-01 | 2007-03-14 | 422 | 155d | 0d | Ram | 80h |
| 551 | 1.2.2.9.1.2 | Submit to BAH | milestone | 0d | 2007-03-14 | 2007-03-14 | 550 | 155d | 0d | Edmond |  |
| 552 | 1.2.2.9.1.3 | Formal Review by BAH |  | 10d | 2007-03-15 | 2007-03-28 | 551 | 155d |  | BAH | 80h |
| 553 | 1.2.2.9.2 | **Create Functional Tests** |  | 15d | 2007-03-01 | 2007-03-21 |  | 160d |  |  | 320h |
| 554 | 1.2.2.9.2.1 | Create Functional Tests for Use Cases |  | 10d | 2007-03-01 | 2007-03-14 | 422 | 160d | 0d | Renee; Natasha; Sean | 240h |
| 555 | 1.2.2.9.2.2 | Review by Adopters |  | 5d | 2007-03-15 | 2007-03-21 | 554 | 160d |  | Mayo; WF | 80h |

| ID | WBS | Task | Type | Duration | Start | Finish | Predecessors | Baseline start | Baseline finish | Baseline duration | Total slack | Free slack | Constraint | Resources | Work |
| --- | --- | --- | --- | --- | --- | --- | --- | --- | --- | --- | --- | --- | --- | --- | --- |
| 556 | 1.2.2.9.3 | **Test Data** |  | 20d | 2007-03-01 | 2007-03-28 |  |  |  |  | 155d |  |  |  | 400h |
| 557 | 1.2.2.9.3.1 | Create test data set (Task 3.7) |  | 10d | 2007-03-01 | 2007-03-14 | 422 |  |  |  | 155d | 0d |  | Renee; David | 160h |
| 558 | 1.2.2.9.3.2 | Submit for Review | milestone | 0d | 2007-03-14 | 2007-03-14 | 557 |  |  |  | 155d | 0d |  | Edmond |  |
| 559 | 1.2.2.9.3.3 | Review |  | 10d | 2007-03-15 | 2007-03-28 | 558 |  |  |  | 155d |  |  | BAH; Mayo; WF | 240h |
| 560 | 1.2.2.9.4 | **Testing** |  | 20d | 2007-04-02 | 2007-04-27 |  |  |  |  | -18d | 0d |  |  | 240h |
| 561 | 1.2.2.9.4.1 | Testing |  | 5d | 2007-04-02 | 2007-04-06 | 510 |  |  |  | -18d | 0d |  | Renee; David; Natasha | 120h |
| 562 | 1.2.2.9.4.2 | Submit Test Results Report (Task 3.7) | milestone | 0d | 2007-04-06 | 2007-04-06 | 561 |  |  |  | 133d | 0d |  | Edmond |  |
| 563 | 1.2.2.9.4.3 | Formal Review of Test results Report |  | 15d | 2007-04-09 | 2007-04-27 | 562 |  |  |  | 133d |  |  | BAH | 120h |
| 564 | 1.2.2.10 | **Deployment** |  | 15d | 2007-04-02 | 2007-04-20 |  |  |  |  | -15d | 0d |  |  | 144h |
| 565 | 1.2.2.10.1 | Submit prototype code (Task 3.5) | milestone | 0d | 2007-04-06 | 2007-04-06 | 561 |  |  |  | 138d | 0d |  | Ram |  |
| 566 | 1.2.2.10.2 | Formal Review of Code by BAH |  | 10d | 2007-04-09 | 2007-04-20 | 565 |  |  |  | 138d |  |  | BAH | 80h |
| 567 | 1.2.2.10.3 | Update Installation Guide |  | 2d | 2007-04-02 | 2007-04-03 | 510 |  |  |  | -15d | 0d |  | Krikor; Vinay | 32h |
| 568 | 1.2.2.10.4 | Deploy Prototype for Iteration 1 at Mayo and WF |  | 1d | 2007-04-09 | 2007-04-09 | 561, 567 |  |  |  | -18d | 0d |  | Vinay; Mayo; WF | 24h |
| 569 | 1.2.2.10.5 | Make URL Public |  | 1d | 2007-04-09 | 2007-04-09 | 561 |  |  |  | 147d |  |  | Vinay | 8h |
| 570 | 1.2.2.11 | Finish Iteration 2 | milestone | 0d | 2007-04-09 | 2007-04-09 | 568 | 2007-03-29 | 2007-04-04 | 5d | -18d | 0d |  |  |  |
| 571 | 1.2.3 | **Construction Phase Iteration 3** |  | 54d? | 2007-03-15 | 2007-05-29 | 570 | 2007-04-04 | 2007-05-07 | 23d | 0d |  |  |  | 4880h |
| 572 | 1.2.3.1 | Begin Iteration 3 | milestone | 0d | 2007-04-01 | 2007-04-01 |  | 2007-03-02 | 2007-03-02 | 0d | -6d | 0d | must start on 2007-04-01 |  |  |
| 573 | 1.2.3.2 | **Iteration Planning** |  | 2d | 2007-04-10 | 2007-04-11 |  |  |  |  | 142d |  |  |  | 48h |
| 574 | 1.2.3.2.1 | Review and finalize Ucases and Work List for Iteration |  | 1d | 2007-04-10 | 2007-04-10 | 572 |  |  |  | 142d | 0d |  | Edmond; Ram; Vinay | 24h |
| 575 | 1.2.3.2.2 | Review and finalize assignments for Iteration |  | 1d | 2007-04-11 | 2007-04-11 | 574 |  |  |  | 142d | 0d |  | Edmond; Ram; Vinay | 24h |
| 576 | 1.2.3.3 | **Project Management** |  | 23d | 2007-03-15 | 2007-04-16 |  |  |  |  | 0d |  |  |  | 160h |
| 577 | 1.2.3.3.1 | Update Project Plan |  | 3d | 2007-04-12 | 2007-04-16 | 575 |  |  |  | 142d |  |  | Edmond | 24h |
| 578 | 1.2.3.3.2 | **CaAERS CCB (Task 2.10)** |  | 1d | 2007-04-10 | 2007-04-10 |  |  |  |  | 146d |  |  |  | 8h |
| 579 | 1.2.3.3.2.1 | CCB Meetings |  | 1d | 2007-04-10 | 2007-04-10 |  |  |  |  | 146d |  | finish no earlier than 2007-04-02 | Edmond | 8h |

| ID | WBS | Task | Type | Duration | Start | Finish | Predecessors | Total slack | Free slack | Constraint | Resources | Work |
| --- | --- | --- | --- | --- | --- | --- | --- | --- | --- | --- | --- | --- |
| 580 | 1.2.3.3.3 | **Weekly Team/Developers Meeting** |  | 16d | 2007-03-19 | 2007-04-09 |  | 0d |  |  |  | 32h |
| 581 | 1.2.3.3.3.1 | Weekly Team Meeting 1 |  | 1d | 2007-03-19 | 2007-03-19 |  | -16d | 0d | must start on 2007-03-19 | Edmond | 8h |
| 582 | 1.2.3.3.3.2 | Weekly Team Meeting 2 |  | 1d | 2007-03-26 | 2007-03-26 |  | -11d | 0d | must start on 2007-03-26 | Edmond | 8h |
| 583 | 1.2.3.3.3.3 | Weekly Team Meeting 3 |  | 1d | 2007-04-02 | 2007-04-02 |  | -6d | 0d | must start on 2007-04-02 | Edmond | 8h |
| 584 | 1.2.3.3.3.4 | Weekly Team Meeting 4 |  | 1d | 2007-04-09 | 2007-04-09 |  | -1d | 0d | must start on 2007-04-09 | Edmond | 8h |
| 585 | 1.2.3.3.4 | **Status and Risk Reporting** |  | 21d | 2007-03-16 | 2007-04-13 |  | 0d |  |  |  | 64h |
| 586 | 1.2.3.3.4.1 | Bi-weekly Risk Update in caMP (Task 1.4) |  | 1d | 2007-03-16 | 2007-03-16 |  | -17d | 0d | must start on 2007-03-16 | Edmond | 8h |
| 587 | 1.2.3.3.4.2 | Bi-weekly Risk Matrix Update Meeting |  | 1d | 2007-03-16 | 2007-03-16 |  | -17d | 0d | must start on 2007-03-16 | Edmond | 8h |
| 588 | 1.2.3.3.4.3 | Bi-weekly Risk Update in caMP (Task 1.4) |  | 1d | 2007-04-10 | 2007-04-10 |  | 146d |  | start no earlier than 2007-03-30 | Edmond | 8h |
| 589 | 1.2.3.3.4.4 | Bi-weekly Risk Matrix Update Meeting |  | 1d | 2007-03-30 | 2007-03-30 |  | -7d | 0d | must start on 2007-03-30 | Edmond | 8h |
| 590 | 1.2.3.3.4.5 | Bi-weekly Status Update Meeting with BAH/NCI |  | 1d | 2007-03-23 | 2007-03-23 |  | -12d | 0d | must start on 2007-03-23 | Edmond | 8h |
| 591 | 1.2.3.3.4.6 | Bi-weekly Status Update Meeting with BAH/NCI |  | 1d | 2007-04-06 | 2007-04-06 |  | -2d | 0d | must start on 2007-04-06 | Edmond | 8h |
| 592 | 1.2.3.3.4.7 | Monthly Status Report (Task 1.3) |  | 1d | 2007-04-13 | 2007-04-13 |  | 0d |  | must finish on 2007-04-13 | Edmond | 8h |
| 593 | 1.2.3.3.4.8 | Monthly Risk Matrix Update (Task 1.3) |  | 1d | 2007-04-13 | 2007-04-13 | 592SS | 143d |  |  | Edmond | 8h |
| 594 | 1.2.3.3.5 | **Collaboration Management Activities** |  | 16d | 2007-03-15 | 2007-04-05 |  | 0d |  |  |  | 32h |
| 595 | 1.2.3.3.5.1 | Adopters Mtg |  | 1d | 2007-03-15 | 2007-03-15 |  | -18d | 0d | must start on 2007-03-15 | Edmond | 8h |
| 596 | 1.2.3.3.5.2 | Bi-Weekly AE SIG Meeting |  | 1d | 2007-03-22 | 2007-03-22 |  | -13d | 0d | must start on 2007-03-22 | Edmond | 8h |
| 597 | 1.2.3.3.5.3 | Adopters Mtg |  | 1d | 2007-03-29 | 2007-03-29 |  | -8d | 0d | must start on 2007-03-29 | Edmond | 8h |
| 598 | 1.2.3.3.5.4 | Bi-Weekly AE SIG Meeting |  | 1d | 2007-04-05 | 2007-04-05 |  | -3d | 0d | must start on 2007-04-05 | Edmond | 8h |
| 599 | 1.2.3.4 | **Environment** |  | 3d | 2007-04-10 | 2007-04-12 |  | 144d |  |  |  | 24h |
| 600 | 1.2.3.4.1 | Update Environment |  | 3d | 2007-04-10 | 2007-04-12 |  | 144d |  |  | Vinay | 24h |
| 601 | 1.2.3.5 | **SCM** |  | 5d | 2007-04-10 | 2007-04-16 |  | 142d |  |  |  | 40h |
| 602 | 1.2.3.5.1 | Manage Repository |  | 5d | 2007-04-10 | 2007-04-16 |  | 142d |  |  | Rhett | 40h |
| 603 | 1.2.3.6 | **Requirements** |  | 30d | 2007-04-10 | 2007-05-21 |  | 117d |  |  |  | 880h |
| 604 | 1.2.3.6.1 | **Updated Use Case Specification and Realization** |  | 30d | 2007-04-10 | 2007-05-21 |  | 117d |  |  |  | 280h |
| 605 | 1.2.3.6.1.1 | Developer draft |  | 5d | 2007-04-10 | 2007-04-16 |  | 117d | 0d |  | Sean | 40h |
| 606 | 1.2.3.6.1.2 | Adopters/Collobators Review |  | 5d | 2007-04-17 | 2007-04-23 | 605 | 117d | 0d |  | Mayo; WF | 80h |
| 607 | 1.2.3.6.1.3 | Update Use Case Document |  | 5d | 2007-04-24 | 2007-04-30 | 606 | 117d | 0d |  | Sean | 40h |
| 608 | 1.2.3.6.1.4 | Submit Updated Use Case Document to BAH (Task 3.1) | milestone | 0d | 2007-04-30 | 2007-04-30 | 607 | 117d | 0d |  | Edmond |  |
| 609 | 1.2.3.6.1.5 | Formal Review of Updated Use Case Document |  | 15d | 2007-05-01 | 2007-05-21 | 608 | 117d |  |  | BAH | 120h |

| ID | WBS | Task | Type | Duration | Start | Finish | Predecessors | Total slack | Free slack | Resources | Work |
| --- | --- | --- | --- | --- | --- | --- | --- | --- | --- | --- | --- |
| 610 | 1.2.3.6.2 | **Updated SRS Document** |  | 30d | 2007-04-10 | 2007-05-21 |  | 117d |  |  | 280h |
| 611 | 1.2.3.6.2.1 | Developer draft |  | 5d | 2007-04-10 | 2007-04-16 |  | 117d | 0d | Sean | 40h |
| 612 | 1.2.3.6.2.2 | Adopters/Collobators Review |  | 5d | 2007-04-17 | 2007-04-23 | 611 | 117d | 0d | Mayo; WF | 80h |
| 613 | 1.2.3.6.2.3 | Update SRS |  | 5d | 2007-04-24 | 2007-04-30 | 612 | 117d | 0d | Sean | 40h |
| 614 | 1.2.3.6.2.4 | Submit Updated SRS Document to BAH (Task 3.2) | milestone | 0d | 2007-04-30 | 2007-04-30 | 613 | 117d | 0d | Mayo; WF |  |
| 615 | 1.2.3.6.2.5 | Formal Review of Updated SRS |  | 15d | 2007-05-01 | 2007-05-21 | 614 | 117d |  | BAH | 120h |
| 616 | 1.2.3.6.3 | **Updated UML Static Class Diagram Model** |  | 30d | 2007-04-10 | 2007-05-21 |  | 117d |  |  | 320h |
| 617 | 1.2.3.6.3.1 | Developer draft |  | 5d | 2007-04-10 | 2007-04-16 |  | 117d | 0d | Ram; Sean | 80h |
| 618 | 1.2.3.6.3.2 | Adopters/Collobators Review |  | 5d | 2007-04-17 | 2007-04-23 | 617 | 117d | 0d | Mayo; WF | 80h |
| 619 | 1.2.3.6.3.3 | Update UML |  | 5d | 2007-04-24 | 2007-04-30 | 618 | 117d | 0d | Sean | 40h |
| 620 | 1.2.3.6.3.4 | Submit UML to BAH (Task 3.3) | milestone | 0d | 2007-04-30 | 2007-04-30 | 619 | 117d | 0d | Edmond |  |
| 621 | 1.2.3.6.3.5 | Formal Review of UML |  | 15d | 2007-05-01 | 2007-05-21 | 620 | 117d |  | BAH | 120h |
| 622 | 1.2.3.7 | **Analysis and Design** |  | 27d? | 2007-04-10 | 2007-05-16 |  | 120d |  |  | 1032h |
| 623 | 1.2.3.7.1 | **Design Documents** |  | 27d? | 2007-04-10 | 2007-05-16 |  | 120d |  |  | 552h |
| 624 | 1.2.3.7.1.1 | **Protocol Abstraction (Organizations, Committees, Institutions)** |  | 17d | 2007-04-10 | 2007-05-02 |  | 120d |  |  | 176h |
| 625 | 1.2.3.7.1.1.1 | Develop appropriate UML Artifacts |  | 5d | 2007-04-10 | 2007-04-16 |  | 120d | 0d | Krikor | 40h |
| 626 | 1.2.3.7.1.1.2 | Create Design Document |  | 5d | 2007-04-17 | 2007-04-23 | 625 | 120d | 0d | Krikor | 40h |
| 627 | 1.2.3.7.1.1.3 | Adopters/Collaborators Review |  | 5d | 2007-04-24 | 2007-04-30 | 626 | 120d | 0d | Mayo; WF | 80h |
| 628 | 1.2.3.7.1.1.4 | Developers Update |  | 2d | 2007-05-01 | 2007-05-02 | 627 | 120d | 0d | Krikor | 16h |
| 629 | 1.2.3.7.1.2 | **AE Data Collection** |  | 17d | 2007-04-10 | 2007-05-02 |  | 120d |  |  | 176h |
| 630 | 1.2.3.7.1.2.1 | Develop appropriate UML Artifacts |  | 5d | 2007-04-10 | 2007-04-16 |  | 120d | 0d | Rhett | 40h |
| 631 | 1.2.3.7.1.2.2 | Create Design Document |  | 5d | 2007-04-17 | 2007-04-23 | 630 | 120d | 0d | Rhett | 40h |
| 632 | 1.2.3.7.1.2.3 | Adopters/Collaborators Review |  | 5d | 2007-04-24 | 2007-04-30 | 631 | 120d | 0d | Mayo; WF | 80h |
| 633 | 1.2.3.7.1.2.4 | Developers Update |  | 2d | 2007-05-01 | 2007-05-02 | 632 | 120d | 0d | Rhett | 16h |

| ID | WBS | Task | Type | Duration | Start | Finish | Predecessors | Baseline start | Baseline finish | Baseline duration | Total slack | Free slack | Resources | Work |
| --- | --- | --- | --- | --- | --- | --- | --- | --- | --- | --- | --- | --- | --- | --- |
| 634 | 1.2.3.7.1.3 | **Candidate AE** |  | 1d? | 2007-04-10 | 2007-04-10 |  |  |  |  | 136d |  |  | 24h |
| 635 | 1.2.3.7.1.3.1 | Develop appropriate UML Artifacts |  | 1d? | 2007-04-10 | 2007-04-10 |  |  |  |  | 146d |  | Kulasekeran | 8h |
| 636 | 1.2.3.7.1.3.2 | Create Design Document |  | 1d? | 2007-04-10 | 2007-04-10 |  |  |  |  | 146d |  | Kulasekeran | 8h |
| 637 | 1.2.3.7.1.3.3 | Adopters/Collaborators Review |  | 1d? | 2007-04-10 | 2007-04-10 |  |  |  |  | 146d |  |  |  |
| 638 | 1.2.3.7.1.3.4 | Developers Update |  | 1d? | 2007-04-10 | 2007-04-10 |  |  |  |  | 136d | 16d | Kulasekeran | 8h |
| 639 | 1.2.3.7.1.4 | **Institution AE Notification Trigger** |  | 17d | 2007-04-10 | 2007-05-02 |  |  |  |  | 120d |  |  | 176h |
| 640 | 1.2.3.7.1.4.1 | Develop appropriate UML Artifacts |  | 5d | 2007-04-10 | 2007-04-16 |  |  |  |  | 120d | 0d | Sujith | 40h |
| 641 | 1.2.3.7.1.4.2 | Create Design Document |  | 5d | 2007-04-17 | 2007-04-23 | 640 |  |  |  | 120d | 0d | Sujith | 40h |
| 642 | 1.2.3.7.1.4.3 | Adopters/Collaborators Review |  | 5d | 2007-04-24 | 2007-04-30 | 641 |  |  |  | 120d | 0d | Mayo; WF | 80h |
| 643 | 1.2.3.7.1.4.4 | Developers Update |  | 2d | 2007-05-01 | 2007-05-02 | 642 |  |  |  | 120d | 0d | Sujith | 16h |
| 644 | 1.2.3.7.1.5 | Deliver Design document to BAH (Task 3.4) | milestone | 0d | 2007-05-02 | 2007-05-02 | 628, 633, 638, 643 |  |  |  | 130d |  |  |  |
| 645 | 1.2.3.7.1.6 | Deliver UML to BAH (Task 3.3) | milestone | 0d | 2007-05-02 | 2007-05-02 | 628, 633, 638, 643 |  |  |  | 120d | 0d |  |  |
| 646 | 1.2.3.7.1.7 | Formal Review by BAH |  | 10d | 2007-05-03 | 2007-05-16 | 645 |  |  |  | 120d |  |  |  |
| 647 | 1.2.3.7.2 | **Domain Model** |  | 5d | 2007-04-10 | 2007-04-16 |  |  |  |  | 142d |  |  | 40h |
| 648 | 1.2.3.7.2.1 | Update Model/BRIDG Harmonization |  | 5d | 2007-04-10 | 2007-04-16 |  |  |  |  | 142d |  | Ram | 40h |
| 649 | 1.2.3.7.3 | **Technical/Architecture Guide** |  | 20d | 2007-04-10 | 2007-05-07 |  | 2007-01-12 | 2007-01-26 | 11d | 127d |  |  | 440h |
| 650 | 1.2.3.7.3.1 | Update Tech/Arch Guide |  | 5d | 2007-04-10 | 2007-04-16 |  | 2007-01-12 | 2007-01-18 | 5d | 127d | 0d | Vinay; Joshua | 80h |
| 651 | 1.2.3.7.3.2 | Deliver to BAH (Task 2.8) | milestone | 0d | 2007-04-16 | 2007-04-16 | 650 | 2007-01-26 | 2007-01-26 | 0d | 127d | 0d | Edmond |  |
| 652 | 1.2.3.7.3.3 | Formal Review |  | 15d | 2007-04-17 | 2007-05-07 | 651 |  |  |  | 127d |  | BAH; Mayo; WF | 360h |
| 653 | 1.2.3.8 | **Implementation** |  | 16d | 2007-04-10 | 2007-05-01 |  |  |  |  | 111d | 0d |  | 1464h |
| 654 | 1.2.3.8.1 | **Web interface** |  | 5d | 2007-04-10 | 2007-04-16 |  |  |  |  | 122d |  |  | 40h |
| 655 | 1.2.3.8.1.1 | Fourth web interface iteration |  | 5d | 2007-04-10 | 2007-04-16 |  |  |  |  | 122d |  | Richard | 40h |
| 656 | 1.2.3.8.2 | **Enterprise Service Bus** |  | 5d | 2007-04-10 | 2007-04-16 |  |  |  |  | 122d |  |  | 40h |
| 657 | 1.2.3.8.2.1 | Fourth ESB Iteration |  | 5d | 2007-04-10 | 2007-04-16 |  |  |  |  | 122d |  | Joshua | 40h |

| ID | WBS | Task | Duration | Start | Finish | Predecessors | Total slack | Free slack | Resources | Work |
| --- | --- | --- | --- | --- | --- | --- | --- | --- | --- | --- |
| 658 | 1.2.3.8.3 | **Grid service** | 5d | 2007-04-10 | 2007-04-16 |  | 122d |  |  | 40h |
| 659 | 1.2.3.8.3.1 | Implement Grid Service | 5d | 2007-04-10 | 2007-04-16 |  | 122d |  | Joshua | 40h |
| 660 | 1.2.3.8.4 | **Implement Use Cases** | 16d | 2007-04-10 | 2007-05-01 |  | 111d |  |  | 1344h |
| 661 | 1.2.3.8.4.1 | **New Version of Study** | 16d | 2007-04-10 | 2007-05-01 |  | 111d |  |  | 336h |
| 662 | 1.2.3.8.4.1.1 | Implement O/R mapping | 5d | 2007-04-10 | 2007-04-16 |  | 111d | 0d | Krikor | 40h |
| 663 | 1.2.3.8.4.1.2 | Develop DAO | 10d | 2007-04-12 | 2007-04-25 | 662SS+2d | 111d | 0d | Krikor | 80h |
| 664 | 1.2.3.8.4.1.3 | Develop Service | 10d | 2007-04-16 | 2007-04-27 | 663SS+2d | 111d | 0d | Krikor | 80h |
| 665 | 1.2.3.8.4.1.4 | Develop controller and command objects | 10d | 2007-04-18 | 2007-05-01 | 664SS+2d | 111d | 0d | Krikor | 80h |
| 666 | 1.2.3.8.4.1.5 | Develop JUnit test cases | 7d | 2007-04-20 | 2007-04-30 | 665SS+2d | 112d |  | Krikor | 56h |
| 667 | 1.2.3.8.4.2 | **AE Data Collection (cont'd)** | 16d | 2007-04-10 | 2007-05-01 |  | 111d |  |  | 336h |
| 668 | 1.2.3.8.4.2.1 | Implement O/R mapping | 5d | 2007-04-10 | 2007-04-16 |  | 111d | 0d | Rhett | 40h |
| 669 | 1.2.3.8.4.2.2 | Develop DAO | 10d | 2007-04-12 | 2007-04-25 | 668SS+2d | 111d | 0d | Rhett | 80h |
| 670 | 1.2.3.8.4.2.3 | Develop Service | 10d | 2007-04-16 | 2007-04-27 | 669SS+2d | 111d | 0d | Rhett | 80h |
| 671 | 1.2.3.8.4.2.4 | Develop controller and command objects | 10d | 2007-04-18 | 2007-05-01 | 670SS+2d | 111d | 0d | Rhett | 80h |
| 672 | 1.2.3.8.4.2.5 | Develop JUnit test cases | 7d | 2007-04-20 | 2007-04-30 | 671SS+2d | 112d |  | Rhett | 56h |
| 673 | 1.2.3.8.4.3 | **Candidate AE** | 16d | 2007-04-10 | 2007-05-01 |  | 111d |  |  | 336h |
| 674 | 1.2.3.8.4.3.1 | Implement O/R mapping | 5d | 2007-04-10 | 2007-04-16 |  | 111d | 0d | Kulasekaran | 40h |
| 675 | 1.2.3.8.4.3.2 | Develop DAO | 10d | 2007-04-12 | 2007-04-25 | 674SS+2d | 111d | 0d | Kulasekaran | 80h |
| 676 | 1.2.3.8.4.3.3 | Develop Service | 10d | 2007-04-16 | 2007-04-27 | 675SS+2d | 111d | 0d | Kulasekaran | 80h |
| 677 | 1.2.3.8.4.3.4 | Develop controller and command objects | 10d | 2007-04-18 | 2007-05-01 | 676SS+2d | 111d | 0d | Kulasekaran | 80h |
| 678 | 1.2.3.8.4.3.5 | Develop JUnit test cases | 7d | 2007-04-20 | 2007-04-30 | 677SS+2d | 112d |  | Kulasekaran | 56h |
| 679 | 1.2.3.8.4.4 | **Triggers/Notification (cont'd)** | 16d | 2007-04-10 | 2007-05-01 |  | 111d |  |  | 336h |
| 680 | 1.2.3.8.4.4.1 | Implement O/R mapping | 5d | 2007-04-10 | 2007-04-16 |  | 111d | 0d | Sujith | 40h |
| 681 | 1.2.3.8.4.4.2 | Develop DAO | 10d | 2007-04-12 | 2007-04-25 | 680SS+2d | 111d | 0d | Sujith | 80h |
| 682 | 1.2.3.8.4.4.3 | Develop Service | 10d | 2007-04-16 | 2007-04-27 | 681SS+2d | 111d | 0d | Sujith | 80h |
| 683 | 1.2.3.8.4.4.4 | Develop controller and command objects | 10d | 2007-04-18 | 2007-05-01 | 682SS+2d | 111d | 0d | Sujith | 80h |
| 684 | 1.2.3.8.4.4.5 | Develop JUnit test cases | 7d | 2007-04-20 | 2007-04-30 | 683SS+2d | 112d |  | Sujith | 56h |

| ID | WBS | Task | Type | Duration | Start | Finish | Predecessors | Baseline start | Baseline finish | Baseline duration | Total slack | Free slack | Resources | Work |
| --- | --- | --- | --- | --- | --- | --- | --- | --- | --- | --- | --- | --- | --- | --- |
| 685 | 1.2.3.9 | **Testing** |  | 36d? | 2007-04-10 | 2007-05-29 |  |  |  |  | 111d |  |  | 1088h |
| 686 | 1.2.3.9.1 | **Test Plan** |  | 11d? | 2007-04-10 | 2007-04-24 |  |  |  |  | 136d |  |  | 88h |
| 687 | 1.2.3.9.1.1 | Update Test Plan Document (Task 3.6) |  | 10d | 2007-04-10 | 2007-04-23 |  |  |  |  | 136d | 0d | Ram | 80h |
| 688 | 1.2.3.9.1.2 | Submit to BAH | milestone | 0d | 2007-04-23 | 2007-04-23 | 687 |  |  |  | 136d | 0d | Edmond |  |
| 689 | 1.2.3.9.1.3 | Formal Review by BAH |  | 1d? | 2007-04-24 | 2007-04-24 | 688 |  |  |  | 136d |  | BAH | 8h |
| 690 | 1.2.3.9.2 | **Create Functional Tests** |  | 15d | 2007-04-10 | 2007-04-30 |  |  |  |  | 132d |  |  | 320h |
| 691 | 1.2.3.9.2.1 | Create Functional Tests for Use Cases |  | 10d | 2007-04-10 | 2007-04-23 |  |  |  |  | 132d | 0d | Renee; Natasha; Sean | 240h |
| 692 | 1.2.3.9.2.2 | Review by Adopters |  | 5d | 2007-04-24 | 2007-04-30 | 691 |  |  |  | 132d |  | Mayo; WF | 80h |
| 693 | 1.2.3.9.3 | **RTM** |  | 5d | 2007-04-24 | 2007-04-30 |  |  |  |  | 132d |  |  | 40h |
| 694 | 1.2.3.9.3.1 | Create RTM |  | 5d | 2007-04-24 | 2007-04-30 | 691 |  |  |  | 132d |  | Sean | 40h |
| 695 | 1.2.3.9.4 | **Test Data** |  | 20d | 2007-04-10 | 2007-05-07 |  |  |  |  | 127d |  |  | 400h |
| 696 | 1.2.3.9.4.1 | Create test data set (Task 3.7) |  | 10d | 2007-04-10 | 2007-04-23 |  |  |  |  | 127d | 0d | Renee; David | 160h |
| 697 | 1.2.3.9.4.2 | Submit for Review | milestone | 0d | 2007-04-23 | 2007-04-23 | 696 |  |  |  | 127d | 0d | Edmond |  |
| 698 | 1.2.3.9.4.3 | Review |  | 10d | 2007-04-24 | 2007-05-07 | 697 |  |  |  | 127d |  | BAH; Mayo; WF | 240h |
| 699 | 1.2.3.9.5 | **Testing** |  | 20d | 2007-05-02 | 2007-05-29 |  |  |  |  | 111d |  |  | 240h |
| 700 | 1.2.3.9.5.1 | Testing |  | 5d | 2007-05-02 | 2007-05-08 | 653 |  |  |  | 111d | 0d | Renee; David; Natasha | 120h |
| 701 | 1.2.3.9.5.2 | Submit Test Results Report (Task 3.7) | milestone | 0d | 2007-05-08 | 2007-05-08 | 700 |  |  |  | 111d | 0d | Edmond |  |
| 702 | 1.2.3.9.5.3 | Formal Review of Test results Report |  | 15d | 2007-05-09 | 2007-05-29 | 701 |  |  |  | 111d |  | BAH | 120h |
| 703 | 1.2.3.10 | **Deployment** |  | 15d | 2007-05-02 | 2007-05-22 |  |  |  |  | 116d |  |  | 144h |
| 704 | 1.2.3.10.1 | Submit prototype code (Task 3.5) | milestone | 0d | 2007-05-08 | 2007-05-08 | 700 |  |  |  | 116d | 0d | Ram |  |
| 705 | 1.2.3.10.2 | Formal Review of Code by BAH |  | 10d | 2007-05-09 | 2007-05-22 | 704 |  |  |  | 116d |  | BAH | 80h |
| 706 | 1.2.3.10.3 | Update Installation Guide |  | 2d | 2007-05-02 | 2007-05-03 | 653 |  |  |  | 128d | 3d | Krikor; Vinay | 32h |
| 707 | 1.2.3.10.4 | Deploy Prototype for Iteration 1 at Mayo and WF |  | 1d | 2007-05-09 | 2007-05-09 | 700, 706 |  |  |  | 125d | 0d | Vinay; Mayo; WF | 24h |
| 708 | 1.2.3.10.5 | Make URL Public |  | 1d | 2007-05-09 | 2007-05-09 | 700 |  |  |  | 125d |  | Vinay | 8h |
| 709 | 1.2.3.11 | Finish Iteration 2 | milestone | 0d | 2007-05-09 | 2007-05-09 | 707 | 2007-03-29 | 2007-04-04 | 5d | 125d |  |  |  |
| 710 | 1.2.3.12 | Begin Iteration 3 | milestone | 0d | 2007-04-09 | 2007-04-09 |  | 2007-04-04 | 2007-04-04 | 0d | 0d |  |  |  |
| 711 | 1.2.3.13 | Environment Updates |  | 10d | 2007-04-10 | 2007-04-23 |  | 2007-04-05 | 2007-04-18 | 10d | 137d |  |  |  |
| 712 | 1.2.3.14 | Updates to Requirements, Use Case, UML, and Design Document |  | 20d | 2007-04-10 | 2007-05-07 |  | 2007-04-05 | 2007-05-02 | 20d | 127d |  |  |  |
| 713 | 1.2.3.15 | Test Plan and RTM Updates |  | 15d | 2007-04-10 | 2007-04-30 |  | 2007-04-05 | 2007-04-25 | 15d | 132d |  |  |  |
| 714 | 1.2.3.16 | Develop Code |  | 20d | 2007-04-10 | 2007-05-07 |  | 2007-04-05 | 2007-05-02 | 20d | 127d |  |  |  |
| 715 | 1.2.3.17 | Testing |  | 20d | 2007-04-10 | 2007-05-07 |  | 2007-04-05 | 2007-05-02 | 20d | 127d |  |  |  |
| 716 | 1.2.3.18 | Installation Guide Drafts |  | 5d | 2007-05-01 | 2007-05-07 | 717FS-5d | 2007-04-26 | 2007-05-02 | 5d | 127d |  |  |  |
| 717 | 1.2.3.19 | Finish Iteration 3 | milestone | 0d | 2007-05-07 | 2007-05-07 | 710FS+20d | 2007-05-02 | 2007-05-02 | 0d | 0d |  |  |  |
| 718 | 1.2.3.20 | Iteration 3 Review and Feedback |  | 5d | 2007-05-04 | 2007-05-10 | 717FS-2d | 2007-05-01 | 2007-05-07 | 5d | 0d |  |  |  |

| ID | WBS | Task | Type | Duration | Start | Finish | Predecessors | Baseline start | Baseline finish | Baseline duration | Total slack |
| --- | --- | --- | --- | --- | --- | --- | --- | --- | --- | --- | --- |
| 719 | 1.2.4 | **Construction Phase Iteration 4** |  | 23d | 2007-05-10 | 2007-06-12 | 718 | 2007-05-07 | 2007-06-07 | 23d | 0d |
| 720 | 1.2.4.1 | Begin Iteration 4 | milestone | 0d | 2007-05-10 | 2007-05-10 |  | 2007-05-07 | 2007-05-07 | 0d | 0d |
| 721 | 1.2.4.2 | Environment Updates |  | 10d | 2007-05-11 | 2007-05-24 |  | 2007-05-08 | 2007-05-21 | 10d | 114d |
| 722 | 1.2.4.3 | Updates to Requirements, Use Case, UML, and Design Document |  | 20d | 2007-05-11 | 2007-06-07 |  | 2007-05-08 | 2007-06-04 | 20d | 104d |
| 723 | 1.2.4.4 | Test Plan and RTM Updates |  | 15d | 2007-05-11 | 2007-05-31 |  | 2007-05-08 | 2007-05-28 | 15d | 109d |
| 724 | 1.2.4.5 | Develop Code |  | 20d | 2007-05-11 | 2007-06-07 |  | 2007-05-08 | 2007-06-04 | 20d | 104d |
| 725 | 1.2.4.6 | Testing |  | 20d | 2007-05-11 | 2007-06-07 |  | 2007-05-08 | 2007-06-04 | 20d | 104d |
| 726 | 1.2.4.7 | Installation Guide Draft |  | 5d | 2007-06-01 | 2007-06-07 | 729FS-5d | 2007-05-29 | 2007-06-04 | 5d | 104d |
| 727 | 1.2.4.8 | Administrators Guide Draft |  | 5d | 2007-06-01 | 2007-06-07 | 729FS-5d | 2007-05-29 | 2007-06-04 | 5d | 104d |
| 728 | 1.2.4.9 | End User Guide Draft |  | 5d | 2007-06-01 | 2007-06-07 | 729FS-5d | 2007-05-29 | 2007-06-04 | 5d | 104d |
| 729 | 1.2.4.10 | Finish Iteration 4 | milestone | 0d | 2007-06-07 | 2007-06-07 | 720FS+20d | 2007-06-04 | 2007-06-04 | 0d | 0d |
| 730 | 1.2.4.11 | Iteration 4 Review and Feedback |  | 5d | 2007-06-06 | 2007-06-12 | 729FS-2d | 2007-06-01 | 2007-06-07 | 5d | 0d |
| 731 | 1.2.5 | **Construction Phase Iteration 5** |  | 23d | 2007-06-12 | 2007-07-13 | 730 | 2007-06-07 | 2007-07-10 | 23d | 0d |
| 732 | 1.2.5.1 | Begin Iteration 5 | milestone | 0d | 2007-06-12 | 2007-06-12 |  | 2007-06-07 | 2007-06-07 | 0d | 0d |
| 733 | 1.2.5.2 | Environment Updates |  | 10d | 2007-06-13 | 2007-06-26 |  | 2007-06-08 | 2007-06-21 | 10d | 91d |
| 734 | 1.2.5.3 | Updates to Requirements, Use Case, UML, and Design Document |  | 20d | 2007-06-13 | 2007-07-10 |  | 2007-06-08 | 2007-07-05 | 20d | 81d |
| 735 | 1.2.5.4 | Test Plan and RTM Updates |  | 15d | 2007-06-13 | 2007-07-03 |  | 2007-06-08 | 2007-06-28 | 15d | 86d |
| 736 | 1.2.5.5 | Develop Code |  | 20d | 2007-06-13 | 2007-07-10 |  | 2007-06-08 | 2007-07-05 | 20d | 81d |
| 737 | 1.2.5.6 | Testing |  | 20d | 2007-06-13 | 2007-07-10 |  | 2007-06-08 | 2007-07-05 | 20d | 81d |
| 738 | 1.2.5.7 | Testing Results |  | 5d | 2007-07-04 | 2007-07-10 | 742FS-5d | 2007-06-29 | 2007-07-05 | 5d | 81d |
| 739 | 1.2.5.8 | Installation Guide Draft |  | 5d | 2007-07-04 | 2007-07-10 | 742FS-5d | 2007-06-29 | 2007-07-05 | 5d | 81d |
| 740 | 1.2.5.9 | Administrators Guide Draft |  | 5d | 2007-07-04 | 2007-07-10 | 742FS-5d | 2007-06-29 | 2007-07-05 | 5d | 81d |
| 741 | 1.2.5.10 | End User Guide Draft |  | 5d | 2007-06-13 | 2007-06-19 |  | 2007-06-08 | 2007-06-14 | 5d | 96d |
| 742 | 1.2.5.11 | Finish Iteration 5 | milestone | 0d | 2007-07-10 | 2007-07-10 | 732FS+20d | 2007-07-05 | 2007-07-05 | 0d | 0d |
| 743 | 1.2.5.12 | Iteration 5 Review and Feedback |  | 5d | 2007-07-09 | 2007-07-13 | 742FS-2d | 2007-07-04 | 2007-07-10 | 5d | 0d |

| ID | WBS | Task | Type | Duration | Start | Finish | Predecessors | Baseline start | Baseline finish | Baseline duration | Total slack | Free slack |
| --- | --- | --- | --- | --- | --- | --- | --- | --- | --- | --- | --- | --- |
| 744 | 1.2.6 | **Construction Phase Iteration 6** |  | 23d | 2007-07-13 | 2007-08-15 | 743 | 2007-07-10 | 2007-08-10 | 23d | 0d |  |
| 745 | 1.2.6.1 | Begin Iteration 6 | milestone | 0d | 2007-07-13 | 2007-07-13 |  | 2007-07-10 | 2007-07-10 | 0d | 0d |  |
| 746 | 1.2.6.2 | Environment Updates |  | 10d | 2007-07-16 | 2007-07-27 |  | 2007-07-11 | 2007-07-24 | 10d | 68d |  |
| 747 | 1.2.6.3 | Updates to Requirements, Use Case, UML, and Design Document |  | 20d | 2007-07-16 | 2007-08-10 |  | 2007-07-11 | 2007-08-07 | 20d | 58d |  |
| 748 | 1.2.6.4 | Test Plan and RTM Updates |  | 15d | 2007-07-16 | 2007-08-03 |  | 2007-07-11 | 2007-07-31 | 15d | 63d |  |
| 749 | 1.2.6.5 | Develop Code |  | 20d | 2007-07-16 | 2007-08-10 |  | 2007-07-11 | 2007-08-07 | 20d | 58d |  |
| 750 | 1.2.6.6 | Installation Guide Draft |  | 5d | 2007-08-06 | 2007-08-10 | 755FS-5d | 2007-08-01 | 2007-08-07 | 5d | 58d |  |
| 751 | 1.2.6.7 | Administrators Guide Draft |  | 5d | 2007-08-06 | 2007-08-10 | 755FS-5d | 2007-08-01 | 2007-08-07 | 5d | 58d |  |
| 752 | 1.2.6.8 | End User Guide Draft |  | 5d | 2007-08-06 | 2007-08-10 | 755FS-5d | 2007-08-01 | 2007-08-07 | 5d | 58d |  |
| 753 | 1.2.6.9 | Testing |  | 20d | 2007-07-16 | 2007-08-10 |  | 2007-07-11 | 2007-08-07 | 20d | 58d | 0d |
| 754 | 1.2.6.10 | Testing Results |  | 5d | 2007-08-06 | 2007-08-10 | 753FS-5d | 2007-08-01 | 2007-08-07 | 5d | 58d |  |
| 755 | 1.2.6.11 | Finish Iteration 6 | milestone | 0d | 2007-08-10 | 2007-08-10 | 745FS+20d | 2007-08-07 | 2007-08-07 | 0d | 0d |  |
| 756 | 1.2.6.12 | Iteration 6 Review and Feedback |  | 5d | 2007-08-09 | 2007-08-15 | 755FS-2d | 2007-08-06 | 2007-08-10 | 5d | 0d |  |
| 757 | 1.2.7 | **Construction Phase Iteration 7** |  | 23d | 2007-08-15 | 2007-09-17 | 756 | 2007-08-10 | 2007-09-12 | 23d | 0d |  |
| 758 | 1.2.7.1 | Begin Iteration 7 | milestone | 0d | 2007-08-15 | 2007-08-15 |  | 2007-08-10 | 2007-08-10 | 0d | 0d |  |
| 759 | 1.2.7.2 | Environment Updates |  | 10d | 2007-08-16 | 2007-08-29 |  | 2007-08-13 | 2007-08-24 | 10d | 45d |  |
| 760 | 1.2.7.3 | Finalize Requirements, Use Case, UML, and Design Document |  | 10d | 2007-08-16 | 2007-08-29 |  | 2007-08-13 | 2007-08-24 | 10d | 35d | 0d |
| 761 | 1.2.7.4 | Test Plan and RTM Updates (Task 3.6) |  | 15d | 2007-08-16 | 2007-09-05 |  | 2007-08-13 | 2007-08-31 | 15d | 40d |  |
| 762 | 1.2.7.5 | Finalize Code Base (Task 3.5) |  | 20d | 2007-08-16 | 2007-09-12 |  | 2007-08-13 | 2007-09-07 | 20d | 35d |  |
| 763 | 1.2.7.6 | Testing |  | 20d | 2007-08-16 | 2007-09-12 |  | 2007-08-13 | 2007-09-07 | 20d | 35d |  |
| 764 | 1.2.7.7 | Final Test Results Report (3.8) |  | 5d | 2007-09-06 | 2007-09-12 | 772FS-5d | 2007-09-03 | 2007-09-07 | 5d | 35d |  |
| 765 | 1.2.7.8 | Final Transition Phase Plan (3.16) |  | 5d | 2007-09-06 | 2007-09-12 | 772FS-5d | 2007-09-03 | 2007-09-07 | 5d | 35d |  |
| 766 | 1.2.7.9 | Compatibility Review Submission Package (Task 3.12) |  | 10d | 2007-08-30 | 2007-09-12 | 772FS-10d | 2007-08-27 | 2007-09-07 | 10d | 35d |  |
| 767 | 1.2.7.10 | Generation of CDEs (Task 3.11.2) |  | 10d | 2007-08-30 | 2007-09-12 | 760 | 2007-08-27 | 2007-09-07 | 10d | 35d |  |
| 768 | 1.2.7.11 | Final Administrators Guide (Task 3.13) |  | 5d | 2007-09-06 | 2007-09-12 | 772FS-5d | 2007-09-03 | 2007-09-07 | 5d | 35d |  |
| 769 | 1.2.7.12 | Final End Users Guide (Task 3.15.2) |  | 5d | 2007-09-06 | 2007-09-12 | 772FS-5d | 2007-09-03 | 2007-09-07 | 5d | 35d |  |
| 770 | 1.2.7.13 | Final Installation Guide (Task 3.10) |  | 5d | 2007-09-06 | 2007-09-12 | 772FS-5d | 2007-09-03 | 2007-09-07 | 5d | 35d |  |
| 771 | 1.2.7.14 | Release Notes (Task 3.14) |  | 5d | 2007-09-06 | 2007-09-12 | 772FS-5d | 2007-09-03 | 2007-09-07 | 5d | 35d |  |
| 772 | 1.2.7.15 | Finish Iteration 7 | milestone | 0d | 2007-09-12 | 2007-09-12 | 758FS+20d | 2007-09-07 | 2007-09-07 | 0d | 0d |  |
| 773 | 1.2.7.16 | Iteration 7 Review and Feedback |  | 5d | 2007-09-11 | 2007-09-17 | 772FS-2d | 2007-09-06 | 2007-09-12 | 5d | 0d |  |
| 774 | 1.2.8 | Finish Construction Phase | milestone | 0d | 2007-09-17 | 2007-09-17 | 773 | 2007-09-12 | 2007-09-12 | 0d | 0d |  |

| ID | WBS | Task | Duration | Start | Finish | Predecessors | Baseline start | Baseline finish | Baseline duration | Total slack |
| --- | --- | --- | --- | --- | --- | --- | --- | --- | --- | --- |
| 775 | 1.3 | **Transition Phase** | 32d | 2007-09-18 | 2007-10-31 | 774 | 2007-09-13 | 2007-09-26 | 10d | 0d |
| 776 | 1.3.1 | Deployment Plan (Task 4.1) | 2d | 2007-09-18 | 2007-09-19 |  | 2007-09-13 | 2007-09-14 | 2d | 0d |
| 777 | 1.3.2 | Deployment | 10d | 2007-09-20 | 2007-10-03 | 776 | 2007-09-17 | 2007-09-21 | 5d | 0d |
| 778 | 1.3.3 | Deployment Report (Task 4.2) | 1d | 2007-09-18 | 2007-09-18 |  | 2007-09-13 | 2007-09-13 | 1d | 31d |
| 779 | 1.3.4 | Code Release Updates (if needed) (Task 4.3) | 20d | 2007-10-04 | 2007-10-31 | 777 | 2007-09-13 | 2007-09-26 | 10d | 0d |
| 780 | 1.3.5 | Guide Updates (if needed) | 10d | 2007-09-18 | 2007-10-01 |  | 2007-09-13 | 2007-09-26 | 10d | 22d |
| 781 | 1.3.6 | **Project Closing Activities** | 10d | 2007-09-18 | 2007-10-01 |  | 2007-09-13 | 2007-09-26 | 10d | 22d |
| 782 | 1.3.6.1 | Lessons Learned (Task 1.6) | 10d | 2007-09-18 | 2007-10-01 |  | 2007-09-13 | 2007-09-26 | 10d | 22d |
| 783 | 1.3.6.2 | Archiving | 10d | 2007-09-18 | 2007-10-01 |  | 2007-09-13 | 2007-09-26 | 10d | 22d |
| 784 | 1.3.6.3 | Contract Closeout | 10d | 2007-09-18 | 2007-10-01 |  | 2007-09-13 | 2007-09-26 | 10d | 22d |
